# FY2010_A

Schedule from OmniPlan, 2011-03-02 to 2020-05-25.
Project start 2011-01-01

## Resources

| Resource | Group |
| --- | --- |
| spuler | staff |
| rauenbuehler | staff |
| schwenz | staff |
| DFS | material |
| erickson | staff |
| vivek | staff |
| eloranta | staff |
| ranson | staff |
| gabbard | staff |
| hayman | staff |
| repasky | staff |
| holden | staff |
| weckwerth | staff |
| dixon | staff |
| irwin | staff |
| loew | staff |
| tsai | staff |
| hwang | staff |
| burghart | staff |
| emmett | staff |
| lovell | staff |
| ellis | staff |
| 1-yr Temp Tech | staff |
| Setup/Teardown Temp Tech | staff |
| RSF EE new hire | staff |
| System Administrator (CDS ? ) | staff |
| Data Manager | staff |
| Administrator | staff |
| Bobka | staff |
| Project Manager | staff |
| carnes | staff |
| bernatsky | staff |
| stillwell | staff |
| schoenrock | staff |

## Schedule

| ID | WBS | Task | Start | Predecessors | Complete | Constraint | Resources | Work | Actual work |
| --- | --- | --- | --- | --- | --- | --- | --- | --- | --- |
| 1 | 1 | **HOLODEC** |  |  |  | start no earlier than 2011-03-15 |  |  |  |
| 2 | 1.1 | **complete** |  |  |  |  |  |  |  |
| 3 | 1.1.1 | New data system | 2011-04-07 |  | 100% | start locked to 2011-04-07 |  | 314.16h | 314.16h |
| 4 | 1.1.2 | **DOE upgrades and test** |  |  |  |  |  |  |  |
| 5 | 1.1.2.1 | Redesign of Optics Subsystems | 2011-03-15 |  | 100% | start locked to 2011-03-15 | spuler [10%] | 13.6h | 13.6h |
| 6 | 1.1.2.2 | send optics out for bid | 2011-04-11 | 5 | 100% | start locked to 2011-04-11 |  | 80h | 80h |
| 7 | 1.1.2.3 | fabricate prims | 2011-05-02 | 6 | 100% | start locked to 2011-05-02 |  | 400h | 400h |
| 8 | 1.1.2.4 | fabricate windows | 2011-04-25 | 6 | 100% | start locked to 2011-04-25 |  | 160h | 160h |
| 9 | 1.1.2.5 | Mechanical Redesign and Fab | 2011-08-09 | 5 | 100% | start locked to 2011-08-09 |  | 184h | 184h |
| 10 | 1.1.2.6 | system check for ICE-T | 2011-06-01 |  | 100% | start locked to 2011-06-01 | spuler [25%] | 16h | 16h |
| 11 | 1.1.2.7 | ICE-T test flighs | 2011-06-20 | 10 | 100% | start locked to 2011-06-20 |  | 72h | 72h |
| 12 | 1.1.2.8 | ICE-T field ops | 2011-07-05 | 11 | 100% | start locked to 2011-07-05 |  | 152h | 152h |
| 13 | 1.1.2.9 | install new optics | 2011-09-01 | 6, 12 | 100% | start locked to 2011-09-01 | spuler [50%] | 30h | 30h |
| 14 | 1.1.2.10 | IDEAS upload | 2011-10-10 | 13 | 100% | start locked to 2011-10-10 |  | 40h | 40h |
| 15 | 1.1.2.11 | fab and install new shroud | 2011-10-26 |  | 100% | start locked to 2011-10-26 |  | 120h | 120h |
| 16 | 1.1.2.12 | IDEAS test flights | 2011-10-17 | 42, 44 | 100% | start locked to 2011-10-17 |  | 200h | 200h |
| 17 | 1.1.2.13 | instrument mods |  | 50 | 100% |  | spuler [50%] | 40h | 40h |
| 18 | 1.1.2.14 | order final parts | 2011-12-20 | 17 | 100% | start locked to 2011-12-20 | spuler [10%] | 40h | 40h |
| 19 | 1.1.3 | Install on GV for IDEAS 2013 | 2013-09-16 |  | 100% | start locked to 2013-09-16 |  | 40h | 40h |
| 20 | 1.1.4 | Prep & install on GV for CSET | 2015-05-15 |  | 100% | start locked to 2015-05-15 | spuler [25%] | 40h | 40h |
| 21 | 1.1.5 | design/build new heater controller mounts | 2015-09-17 |  | 100% | start locked to 2015-09-17 | rauenbuehler | 240h | 240h |
| 22 | 1.1.6 | test spare laser | 2015-10-14 |  | 100% | start locked to 2015-10-14 | spuler | 88h | 88h |
| 23 | 1.1.7 | repair and send to Mich Tech | 2015-11-02 | 21, 22 | 100% | start locked to 2015-11-02 | irwin | 136h | 136h |
| 24 | 1.2 | **ACE-ENA (Phase I)** |  |  |  | start no earlier than 2017-01-01 |  |  |  |
| 25 | 1.2.1 | integration window and TFs in Pasco WA |  |  |  | start no earlier than 2017-02-01 |  | 688h |  |
| 26 | 1.2.2 | check phase in Pasco WA |  |  |  | start no earlier than 2017-02-06 |  | 40h |  |
| 27 | 1.2.3 | install spare laser |  |  | 100% | start no earlier than 2017-01-09 |  | 32h | 32h |
| 28 | 1.2.4 | modify Labview software |  |  | 100% | start no earlier than 2017-01-25 |  | 40h | 40h |
| 29 | 1.2.5 | test flight in Pasco WA |  |  |  | start no earlier than 2017-03-06 |  | 40h |  |
| 30 | 1.2.6 | install revised (thermally conductive) parts |  |  |  | start no earlier than 2017-03-22 |  | 40h |  |
| 31 | 1.2.7 | Shipping by Los Alamos |  |  |  | start no earlier than 2017-05-15 |  | 160h |  |
| 32 | 1.2.8 | Phase I Terceira Island, Azores |  |  |  | start no earlier than 2017-06-15 |  | 232h |  |

Notes:
- 3: Helvetica / left / specify, acquire, install, configure

| ID | WBS | Task | Type | Start | Predecessors | Complete | Constraint | Resources | Work | Actual work |
| --- | --- | --- | --- | --- | --- | --- | --- | --- | --- | --- |
| 33 | 1.3 | **ACE -ENA (Phase II)** |  |  |  |  |  |  |  |  |
| 34 | 1.3.1 | Swap Laser head and align |  |  |  | 100% | start no earlier than 2017-09-28 |  | 88h | 88h |
| 35 | 1.3.2 | Phase II Terceira Island, Azores |  |  |  |  | start no earlier than 2018-01-11 |  | 232h |  |
| 36 | 2 | **3D LAMS** |  |  |  |  | start no earlier than 2011-03-02 |  |  |  |
| 37 | 2.1 | **complete** |  |  |  |  |  |  |  |  |
| 38 | 2.1.1 | **Wing-pod** |  |  |  |  | start no earlier than 2011-03-02 |  |  |  |
| 39 | 2.1.1.1 | Opto-mechancical design |  | 2011-03-02 |  | 100% | start locked to 2011-03-02 | spuler [33%]; rauenbuehler | 670.32h | 670.32h |
| 40 | 2.1.1.2 | Prints and fabrication |  | 2011-07-18 | 39 | 100% | start locked to 2011-07-18 |  | 160h | 160h |
| 41 | 2.1.1.3 | Assemble optics align |  | 2011-08-22 | 40 | 98% | start locked to 2011-08-22 | spuler [75%] | 90h | 88.2h |
| 42 | 2.1.1.4 | test and prepare circulators |  | 2011-09-23 | 41 | 100% | start locked to 2011-09-23 | spuler [50%] | 40h | 40h |
| 43 | 2.1.1.5 | verify circulator IL |  | 2011-10-13 |  | 100% | start locked to 2011-10-13 | spuler | 16h | 16h |
| 44 | 2.1.1.6 | Install fibers in C130 | milestone | 2011-04-13 |  |  | start locked to 2011-04-13 |  |  |  |
| 45 | 2.1.2 | **Data Acquisition** |  |  |  |  | start no earlier than 2011-03-31 |  |  |  |
| 46 | 2.1.2.1 | Design electronic controls |  | 2011-03-31 |  | 100% | start locked to 2011-03-31 |  | 332h | 332h |
| 47 | 2.1.2.2 | Replicate data acq hardware |  | 2011-07-20 |  | 100% | start locked to 2011-07-20 |  | 160h | 160h |
| 48 | 2.1.3 | **IDEAS 2011** |  |  |  |  | start no earlier than 2011-10-10 |  |  |  |
| 49 | 2.1.3.1 | IDEAS upload |  | 2011-10-10 |  | 100% | start locked to 2011-10-10 |  | 40h | 40h |
| 50 | 2.1.3.2 | IDEAS testing flights |  | 2011-10-17 | 42, 44 | 100% | start locked to 2011-10-17 |  | 200h | 200h |
| 51 | 2.1.3.3 | Data processing |  | 2011-11-03 |  | 100% | start locked to 2011-11-03 | spuler [25%] | 40h | 40h |
| 52 | 2.1.3.4 | process 50Hz data |  | 2012-05-02 |  | 100% | start locked to 2012-05-02 | spuler [25%] | 24h | 24h |
| 53 | 2.1.4 | **3 beam 5W amplifier** |  |  |  |  | start no earlier than 2011-09-01 |  |  |  |
| 54 | 2.1.4.1 | **T/R module** |  |  |  |  | start no earlier than 2013-06-05 |  |  |  |
| 55 | 2.1.4.1.1 | complete power supply shelf |  |  | 58 | 100% |  |  | 24h | 24h |
| 56 | 2.1.4.1.2 | finalize for flight |  |  | 55 | 100% |  |  | 24h | 24h |
| 57 | 2.1.4.1.3 | splice return fibers |  |  | 56 | 100% |  |  | 40h | 40h |
| 58 | 2.1.4.2 | 3CH test fiber/receivers and complete chassis |  | 2013-04-10 |  | 100% | start locked to 2013-04-10 | spuler [75%] | 240h | 240h |
| 59 | 2.1.4.3 | order parts |  | 2011-09-01 |  | 100% | start locked to 2011-09-01 | spuler [5%] | 60h | 60h |
| 60 | 2.1.4.4 | Design rack package |  | 2011-12-01 |  | 100% | start locked to 2011-12-01 | spuler [10%]; gabbard [25%] | 320h | 320h |
| 61 | 2.1.4.5 | Construct amp inner chassis |  |  | 60 | 100% |  | DFS | 80h | 80h |
| 62 | 2.1.4.6 | Design and build the enable/monitor PCBs |  | 2012-12-18 |  | 100% | start locked to 2012-12-18 |  | 80h | 80h |
| 63 | 2.1.4.7 | Construct amp outer chassis |  | 2013-02-20 |  | 100% | start locked to 2013-02-20 | DFS | 80h | 80h |
| 64 | 2.1.4.8 | Assemble components |  | 2013-01-08 |  | 100% | start locked to 2013-01-08 | spuler [50%] | 480h | 480h |
| 65 | 2.1.4.9 | Make wiring harnesses |  | 2013-02-25 |  | 100% | start locked to 2013-02-25 | spuler | 224h | 224h |

| ID | WBS | Task | Type | Duration | Start | Predecessors | Complete | Constraint | Resources | Work | Actual work |
| --- | --- | --- | --- | --- | --- | --- | --- | --- | --- | --- | --- |
| 66 | 2.1.5 | **IDEAS 2013** |  |  |  |  |  | start no earlier than 2013-06-20 |  |  |  |
| 67 | 2.1.5.1 | **Wing-Pod mods** |  |  |  |  |  | start no earlier than 2013-06-20 |  |  |  |
| 68 | 2.1.5.1.1 | Set launch fiber angle/LO |  |  |  | 57 | 100% |  | spuler [50%] | 16h | 16h |
| 69 | 2.1.5.1.2 | wing-pod rework & rewire |  |  |  | 68 | 100% |  |  | 120h | 120h |
| 70 | 2.1.5.1.3 | mount new power supply |  |  |  | 69 | 100% |  |  | 16h | 16h |
| 71 | 2.1.5.1.4 | install C-migitsIII |  |  |  | 70 | 100% |  |  | 24h | 24h |
| 72 | 2.1.5.1.5 | measure angles |  |  | 2013-08-07 | 71 | 100% | start locked to 2013-08-07 |  | 24h | 24h |
| 73 | 2.1.5.1.6 | fiber install on GV | milestone |  | 2013-08-19 |  |  | start locked to 2013-08-19 |  |  |  |
| 74 | 2.1.5.2 | IDEAS 2013 test upload |  |  | 2013-08-28 |  | 100% | start locked to 2013-08-28 |  | 80h | 80h |
| 75 | 2.1.5.3 | IDEAS flights and data processing |  |  | 2013-09-20 |  | 100% | start locked to 2013-09-20 |  | 184h | 184h |
| 76 | 2.1.6 | **2014 tasks** |  |  |  |  |  |  |  |  |  |
| 77 | 2.1.6.1 | Build 4th amp and telescope |  |  | 2014-01-21 | 75 |  | start locked to 2014-01-21 |  | 648h | 0h |
| 78 | 2.1.6.2 | measure beam angles |  |  | 2014-06-05 | 77 |  | start locked to 2014-06-05 |  | 304h | 0h |
| 79 | 2.1.6.3 | DEEPWAVE |  | 38d | 2014-06-05 |  |  | start locked to 2014-06-05 |  | 304h |  |
| 80 | 2.1.6.4 | 4th beam integration |  |  | 2014-04-02 |  |  | start locked to 2014-04-02 |  | 160h |  |
| 81 | 2.1.6.5 | HCR test flights |  |  | 2014-11-10 |  |  | start locked to 2014-11-10 |  | 104h |  |
| 82 | 2.1.6.6 | process 3D flights |  |  |  | 81 |  |  |  | 80h |  |
| 83 | 2.1.7 | ARISTO 2015 |  |  | 2015-09-04 |  | 100% | start locked to 2015-09-04 | spuler [50%]; hayman [50%] | 320h | 320h |
| 84 | 2.1.8 | test phase modulators |  |  |  | 83 |  |  |  | 16h |  |
| 85 | 2.1.9 | LAMS completion fund level |  |  |  |  |  | start no earlier than 2016-03-01 |  | 8h |  |
| 86 | 2.1.10 | **ARISTO 2016** |  |  |  |  |  |  |  |  |  |
| 87 | 2.1.10.1 | ARISTO Documentation Due |  |  |  |  |  | start no earlier than 2016-05-23 |  | 8h |  |
| 88 | 2.1.10.2 | ARISTO 2016 Upload |  | 33d |  |  | 100% | start no earlier than 2016-06-13 |  | 264h | 264h |
| 89 | 2.1.10.3 | cal system |  |  |  |  | 100% | start no earlier than 2016-06-08 |  | 120h | 120h |
| 90 | 2.1.10.4 | ARISTO 2016 Flight Ops |  |  |  |  | 100% | start no earlier than 2016-08-01 |  | 120h | 120h |
| 91 | 2.2 | Signal processing publication |  |  |  |  |  | start no earlier than 2018-01-28 |  | 320h |  |
| 92 | 2.3 | install LAMS on GV |  |  |  |  | 33% | start no earlier than 2017-01-18 |  | 24h | 8h |
| 93 | 2.4 | ARISTO 2017 |  |  |  |  | 100% | start no earlier than 2017-02-20 |  | 120h | 120h |

| ID | WBS | Task | Duration | Start | Predecessors | Complete | Constraint | Resources | Work | Actual work |
| --- | --- | --- | --- | --- | --- | --- | --- | --- | --- | --- |
| 94 | 3 | **HSRL** |  |  |  |  | start no earlier than 2011-09-07 |  |  |  |
| 95 | 3.1 | **completed** |  |  |  |  |  |  |  |  |
| 96 | 3.1.1 | **TORERO** |  |  |  |  | start no earlier than 2011-09-07 |  |  |  |
| 97 | 3.1.1.1 | Inflight temperature profile |  | 2013-04-17 |  | 100% | start locked to 2013-04-17 | eloranta [50%] | 320h | 320h |
| 98 | 3.1.1.2 | **Resouces out** |  |  |  |  | start no earlier than 2011-09-07 |  |  |  |
| 99 | 3.1.1.2.1 | JVA Dynamo |  | 2011-09-07 |  | 100% | start locked to 2011-09-07 |  | 160h | 160h |
| 100 | 3.1.1.2.2 | RE Dynamo |  | 2011-09-24 |  | 100% | start locked to 2011-09-24 | erickson | 272h | 272h |
| 101 | 3.1.1.2.3 | Dynamo II |  | 2011-11-14 |  | 100% | start locked to 2011-11-14 |  | 160h | 160h |
| 102 | 3.1.1.3 | TORERO (Chile & Costa Rica) | 30d | 2012-01-19 |  | 100% | start locked to 2012-01-19 |  | 240h | 240h |
| 103 | 3.1.1.4 | GV uninstall & setup in lab |  |  | 102 | 100% |  |  | 40h | 40h |
| 104 | 3.1.1.5 | Install & test new computer |  | 2012-04-03 | 102 | 100% | start locked to 2012-04-03 |  | 80h | 80h |
| 105 | 3.1.1.6 | post TORERO hardware fixes |  | 2012-04-02 | 102 | 100% | start locked to 2012-04-02 | erickson [75%] | 120h | 120h |
| 106 | 3.1.1.7 | TORERO Data quality |  | 2012-11-28 | 102 | 100% | start locked to 2012-11-28 |  | 160h | 160h |
| 107 | 3.1.2 | **Polarization Matrix** |  |  |  |  | start no earlier than 2012-03-23 |  |  |  |
| 108 | 3.1.2.1 | Motor software development |  | 2012-03-23 | 103 | 100% | start locked to 2012-03-23 |  | 120h | 120h |
| 109 | 3.1.2.2 | Install new pol hardware |  | 2012-04-13 | 108 | 100% | start locked to 2012-04-13 |  | 40h | 40h |
| 110 | 3.1.2.3 | Add tilted telescope lock points |  |  | 109 | 100% |  |  | 16h | 16h |
| 111 | 3.1.2.4 | realign HSRL |  |  | 110 | 100% |  | spuler | 32h | 32h |
| 112 | 3.1.2.5 | Collect Phase Matrix data |  | 2012-05-07 | 111 | 100% | start locked to 2012-05-07 | hayman | 1440h | 1440h |
| 113 | 3.1.2.6 | Move to container lab (slant ops) |  | 2012-05-21 |  | 100% | start locked to 2012-05-21 | hayman [50%] | 24h | 24h |
| 114 | 3.1.3 | **seed laser upgrade** |  |  |  |  | start no earlier than 2012-03-06 |  |  |  |
| 115 | 3.1.3.1 | spare laser seed tests |  | 2012-03-06 |  | 100% | start locked to 2012-03-06 | spuler [10%] | 80h | 80h |
| 116 | 3.1.3.2 | align spare laser |  | 2013-05-20 |  | 100% | start locked to 2013-05-20 | spuler [50%]; hayman [50%] | 120h | 120h |
| 117 | 3.1.3.3 | instal new seed laser |  | 2013-07-01 | 116 | 100% | start locked to 2013-07-01 |  | 184h | 184h |

| ID | WBS | Task | Duration | Start | Predecessors | Complete | Constraint | Resources | Work | Actual work |
| --- | --- | --- | --- | --- | --- | --- | --- | --- | --- | --- |
| 118 | 3.1.4 | **CSET PREP** |  |  |  |  |  |  |  |  |
| 119 | 3.1.4.1 | L3 board hardware upgrades |  | 2014-01-08 |  | 100% | start locked to 2014-01-08 |  | 160h | 160h |
| 120 | 3.1.4.2 | control and monitoring |  | 2014-03-19 |  | 100% | start locked to 2014-03-19 |  | 240h | 240h |
| 121 | 3.1.4.3 | data archive website online |  | 2014-02-06 |  | 100% | start locked to 2014-02-06 |  | 240h | 240h |
| 122 | 3.1.4.4 | QD seed laser replacement |  | 2014-08-29 | 119 | 100% | start locked to 2014-08-29 | erickson [50%] | 720h | 720h |
| 123 | 3.1.4.5 | re-coat primary mirror |  |  |  | 100% | start no earlier than 2014-09-03 |  | 160h | 160h |
| 124 | 3.1.4.6 | metal covers for spiders |  |  |  | 100% | start no earlier than 2014-09-03 | DFS; schwenz | 140h | 140h |
| 125 | 3.1.4.7 | make HSRL operational |  | 2014-12-11 | 122 | 100% | start locked to 2014-12-11 | erickson [75%] | 160h | 160h |
| 126 | 3.1.4.8 | autocalibration procedure implimentation |  |  | 125 | 100% | start no earlier than 2014-10-13 | erickson [25%] | 160h | 160h |
| 127 | 3.1.4.9 | eloranta visit |  | 2014-04-14 | 119 | 100% | start locked to 2014-04-14 |  | 40h | 40h |
| 128 | 3.1.4.10 | Seat rail shifters |  | 2015-04-30 |  | 100% | start locked to 2015-04-30 |  | 80h | 80h |
| 129 | 3.1.4.11 | N2 flow on GV windows |  | 2015-05-14 | 128 | 100% | start locked to 2015-05-14 |  | 80h | 80h |
| 130 | 3.1.5 | **FY15 Software Request** |  |  |  |  | start no earlier than 2014-10-01 |  |  |  |
| 131 | 3.1.5.1 | upgrade transfer to CfRadial |  | 2015-03-02 |  | 100% | start locked to 2015-03-02 |  | 240h | 240h |
| 132 | 3.1.5.2 | prepare and support CSET |  | 2015-05-14 | 131 | 100% | start locked to 2015-05-14 |  | 160h | 160h |
| 133 | 3.1.5.3 | CSET ops |  | 2015-06-12 | 132 | 100% | start locked to 2015-06-12 |  | 240h | 240h |
| 134 | 3.1.5.4 | CSET data handling |  | 2015-08-24 | 133 | 100% | start locked to 2015-08-24 |  | 80h | 80h |
| 135 | 3.1.6 | **CSET** |  |  |  |  | start no earlier than 2015-05-04 |  |  |  |
| 136 | 3.1.6.1 | install on GV | 4d | 2015-06-08 |  | 50% | start locked to 2015-06-08 | hayman; holden | 64h | 32h |
| 137 | 3.1.6.2 | calibration tests |  |  | 136 | 100% |  | hayman | 90h | 90h |
| 138 | 3.1.6.3 | test flights |  | 2015-06-19 | 137 | 100% | start locked to 2015-06-19 |  | 60h | 60h |
| 139 | 3.1.6.4 | CSET ops part 1 |  | 2015-07-01 |  | 100% | start locked to 2015-07-01 | holden | 176h | 176h |
| 140 | 3.1.6.5 | CSET ops part II |  |  | 139 | 100% |  | hayman; holden [50%]; erickson [50%] | 176h | 176h |
| 141 | 3.1.6.6 | CSET ops part III |  |  |  | 100% |  | erickson; spuler | 176h | 176h |
| 142 | 3.1.6.7 | removal from GV |  |  | 141 | 100% |  | holden; hayman | 32h | 32h |
| 143 | 3.1.7 | BLOWN-UNDER (declined) | 130d | 2016-10-15 |  | 100% | start locked to 2016-10-15 |  | 1040h | 1040h |

| ID | WBS | Task | Duration | Start | Predecessors | Complete | Constraint | Resources | Work | Actual work |
| --- | --- | --- | --- | --- | --- | --- | --- | --- | --- | --- |
| 144 | 3.1.8 | **FY16 ABR tasks** |  |  | 135 |  |  |  |  |  |
| 145 | 3.1.8.1 | CSET data quality |  | 2015-09-02 | 142 | 100% | start locked to 2015-09-02 |  | 320h | 320h |
| 146 | 3.1.8.2 | purchase laser chiller parts |  | 2015-10-06 |  | 100% | start locked to 2015-10-06 | erickson | 60h | 60h |
| 147 | 3.1.8.3 | repair detectors |  | 2015-10-21 |  | 98% | start locked to 2015-10-21 | erickson [10%] | 48.8h | 48h |
| 148 | 3.1.8.4 | 64-bit DAQ |  | 2015-10-26 |  | 100% | start locked to 2015-10-26 |  | 400h | 400h |
| 149 | 3.1.8.5 | align HSRL |  |  | 147 | 100% | start no earlier than 2016-03-15 | erickson | 80h | 80h |
| 150 | 3.1.8.6 | Morley replacement search | 42d |  |  | 100% | start no earlier than 2015-12-01 | spuler [10%]; vivek [10%]; dixon [10%] | 100.8h | 100.8h |
| 151 | 3.1.8.7 | DQ knowledge trans & document | 20d |  |  | 100% |  |  | 160h | 160h |
| 152 | 3.1.8.8 | Lidar Lab roof hatch |  |  |  | 100% | start no earlier than 2016-02-26 | spuler [10%]; DFS; erickson | 408h | 408h |
| 153 | 3.1.8.9 | Update Processing Cals and Software | 63d |  |  | 100% | start no earlier than 2016-03-07 | hayman [30%] | 151.2h | 151.2h |
| 154 | 3.1.8.10 | **Tech Tasks** |  |  |  |  | start no earlier than 2016-05-18 |  |  |  |
| 155 | 3.1.8.10.1 | Erickson unavailable | 66d | 2016-04-01 |  | 100% | start locked to 2016-04-01 |  | 528h | 528h |
| 156 | 3.1.8.10.2 | Erickson vacation |  |  |  | 100% | start no earlier than 2016-09-14 |  | 112h | 112h |
| 157 | 3.1.9 | OTREC (declined) | 86d | 2018-06-01 |  |  | start locked to 2018-06-01 |  | 688h |  |
| 158 | 3.1.10 | fix spare laser chiller phase II |  |  |  | 100% | start no earlier than 2016-10-06 | erickson | 80h | 80h |
| 159 | 3.1.11 | Software troubleshooting |  |  |  | 100% | start no earlier than 2016-10-06 | burghart | 80h | 80h |
| 160 | 3.1.12 | HAWC OAWL comparison window 1 |  |  |  | 100% | start no earlier than 2016-10-19 |  | 328h | 328h |
| 161 | 3.2 | FY17 ABR request |  |  |  | 50% | start no earlier than 2016-10-01 |  | 2080h | 1048h |
| 162 | 3.3 | **Container Mods** |  |  |  | 80% |  |  | 80h | 64h |
| 163 | 3.3.1 | Container Mods |  |  |  | 100% | start no earlier than 2016-09-21 | DFS [0.01%]; erickson [25%] | 56h | 56h |
| 164 | 3.3.2 | Container Mods |  |  |  | 33% | start no earlier than 2018-03-28 | DFS [0.01%]; erickson [25%] | 24h | 8h |
| 165 | 3.4 | Display Software rewrite |  |  | 160 | 100% |  | burghart [25%] | 320h | 320h |
| 166 | 3.5 | HAWC OAWL comparison |  | 2017-06-08 |  | 100% | start locked to 2017-06-08 |  | 320h | 320h |
| 167 | 3.6 | **Pre SOCRATES repairs** |  |  |  |  |  |  |  |  |
| 168 | 3.6.1 | cable for new DAQ |  |  | 158, 160 | 100% | start no earlier than 2017-10-16 | holden | 104h | 104h |
| 169 | 3.6.2 | Repair Telescope Switch |  |  | 168 | 100% |  | holden | 40h | 40h |
| 170 | 3.6.3 | Replace Nd:YAG 808 nm Pump laser |  |  | 169 | 100% |  | holden | 24h | 24h |
| 171 | 3.6.4 | Repair SHG |  |  | 170 | 100% |  | holden | 40h | 40h |
| 172 | 3.6.5 | Mount sever |  |  | 171 | 100% |  | holden | 24h | 24h |
| 173 | 3.6.6 | Realign |  |  | 171 | 100% | start no earlier than 2017-10-01 |  | 40h | 40h |

| ID | WBS | Task | Type | Duration | Start | Predecessors | Complete | Constraint | Resources | Work | Actual work |
| --- | --- | --- | --- | --- | --- | --- | --- | --- | --- | --- | --- |
| 174 | 3.7 | **SOCRATES** |  |  |  |  |  | start no earlier than 2017-12-14 |  |  |  |
| 175 | 3.7.1 | upload |  |  |  |  |  | start no earlier than 2017-12-12 |  | 80h |  |
| 176 | 3.7.2 | crew phase 1 |  | 12d |  |  |  | start no earlier than 2018-01-11 | hayman; holden | 192h |  |
| 177 | 3.7.3 | crew phase 2 |  | 12d |  |  |  | start no earlier than 2018-01-27 | dixon; spuler [50%] | 144h |  |
| 178 | 3.7.4 | crew phase 3 |  |  |  |  |  | start no earlier than 2018-02-10 | erickson | 96h |  |
| 179 | 3.7.5 | tech vacation |  |  |  | 178 |  |  | erickson | 104h |  |
| 180 | 3.8 | KAMP (proposed IOP) |  |  |  |  |  | start no earlier than 2019-06-01 |  | 344h |  |
| 181 | 4 | **WV DIAL** |  |  |  |  |  | start no earlier than 2011-08-10 |  |  |  |
| 182 | 4.1 | **completed** |  |  |  |  |  | start no earlier than 2011-08-10 |  |  |  |
| 183 | 4.1.1 | **Photodigm DBR's** |  |  |  |  |  | start no earlier than 2011-08-10 |  |  |  |
| 184 | 4.1.1.1 | get specs/quote for DBRs |  |  | 2011-08-10 |  | 100% | start locked to 2011-08-10 | spuler [10%] | 10.4h | 10.4h |
| 185 | 4.1.1.2 | order DBR | milestone |  | 2011-09-01 |  |  | start locked to 2011-09-01 |  |  |  |
| 186 | 4.1.1.3 | DBR Non-recurring Engineering |  |  |  | 185 | 100% |  |  | 320h | 320h |
| 187 | 4.1.1.4 | DBR Fabrication |  |  | 2012-02-06 | 186 | 100% | start locked to 2012-02-06 |  | 320h | 320h |
| 188 | 4.1.1.5 | Verify and Test DBR specs |  |  |  | 187 | 100% |  | spuler | 40h | 40h |
| 189 | 4.1.2 | **MSU window mount** |  |  |  |  |  | start no earlier than 2011-10-17 |  |  |  |
| 190 | 4.1.2.1 | design & spec window |  |  | 2011-10-17 |  | 100% | start locked to 2011-10-17 | spuler | 64h | 64h |
| 191 | 4.1.2.2 | design window cell |  |  | 2011-12-01 | 190 | 100% | start locked to 2011-12-01 |  | 80h | 80h |
| 192 | 4.1.2.3 | build window cell |  |  | 2012-01-31 | 193, 191 | 100% | start locked to 2012-01-31 | DFS | 160h | 160h |
| 193 | 4.1.2.4 | window fabrication |  |  |  | 190 | 100% |  |  | 336h | 336h |
| 194 | 4.1.2.5 | install hatch cover at MSU |  |  | 2012-03-07 | 192 | 100% | start locked to 2012-03-07 |  | 40h | 40h |
| 195 | 4.1.3 | **Expanded beam eye-safety** |  |  |  |  |  | start no earlier than 2011-11-29 |  |  |  |
| 196 | 4.1.3.1 | Design new beam expander |  |  | 2011-11-29 |  | 100% | start locked to 2011-11-29 | spuler [50%] | 80h | 80h |
| 197 | 4.1.3.2 | Build and install expander |  |  | 2011-12-26 |  | 100% | start locked to 2011-12-26 |  | 80h | 80h |
| 198 | 4.1.3.3 | Build secondary cap 4" mirror |  |  | 2012-04-02 | 197 | 100% | start locked to 2012-04-02 |  | 24h | 24h |

| ID | WBS | Task | Type | Start | Predecessors | Complete | Constraint | Resources | Work | Actual work |
| --- | --- | --- | --- | --- | --- | --- | --- | --- | --- | --- |
| 199 | 4.1.4 | **DBR mounts** |  |  |  |  | start no earlier than 2011-11-17 |  |  |  |
| 200 | 4.1.4.1 | Optical Design DBR mount |  | 2011-11-17 |  | 100% | start locked to 2011-11-17 | spuler [50%] | 160h | 160h |
| 201 | 4.1.4.2 | Build COTS DBR mounts |  | 2012-03-07 | 200 | 100% | start locked to 2012-03-07 |  | 160h | 160h |
| 202 | 4.1.4.3 | Mechanical design DBR mount |  | 2012-03-23 |  | 100% | start locked to 2012-03-23 | ranson [50%] | 80h | 80h |
| 203 | 4.1.4.4 | Install DBR/enable locking |  | 2012-05-04 | 201, 187 | 100% | start locked to 2012-05-04 | repasky | 40h | 40h |
| 204 | 4.1.5 | **Field tests** |  |  |  |  | start no earlier than 2012-05-11 |  |  |  |
| 205 | 4.1.5.1 | instrument mods complete | milestone | 2012-05-11 | 203, 194 |  | start locked to 2012-05-11 |  |  |  |
| 206 | 4.1.5.2 | DIAL ops at MSU |  | 2012-05-14 | 205 | 100% | start locked to 2012-05-14 | repasky | 160h | 160h |
| 207 | 4.1.5.3 | MSU hatch mod for GV window |  | 2012-05-17 |  | 100% | start locked to 2012-05-17 | DFS | 80h | 80h |
| 208 | 4.1.5.4 | NCAR hatch mod for GV window |  |  | 207 | 100% |  | DFS | 80h | 80h |
| 209 | 4.1.5.5 | Howard hatch mod |  | 2012-07-03 | 208 | 100% | start locked to 2012-07-03 | DFS | 80h | 80h |
| 210 | 4.1.5.6 | Shipping Crate made |  |  | 209 | 100% |  |  | 40h | 40h |
| 211 | 4.1.5.7 | ship to NCAR |  | 2012-06-11 | 206 | 100% | start locked to 2012-06-11 | repasky | 40h | 40h |
| 212 | 4.1.5.8 | DIAL ops at NCAR |  | 2012-06-18 | 211 | 100% | start locked to 2012-06-18 | spuler | 216h | 216h |
| 213 | 4.1.5.9 | ship to Howard |  | 2012-07-25 | 212 | 100% | start locked to 2012-07-25 | spuler | 40h | 40h |
| 214 | 4.1.5.10 | DIAL ops at Howard |  | 2012-08-01 | 213 | 100% | start locked to 2012-08-01 | spuler [67%] | 176h | 176h |
| 215 | 4.1.5.11 | DIAL ops at DFW |  | 2012-09-21 | 214 | 100% | start locked to 2012-09-21 |  | 80h | 80h |
| 216 | 4.1.6 | **Evaluation and redesign** |  |  |  |  | start no earlier than 2012-10-05 |  |  |  |
| 217 | 4.1.6.1 | prepare for evaluation meeting |  |  | 215 | 100% |  |  | 100h | 100h |
| 218 | 4.1.6.2 | evaluation meeting | milestone | 2012-10-24 | 217 |  | start locked to 2012-10-24 |  |  |  |
| 219 | 4.1.6.3 | preliminary design |  | 2012-11-05 | 218 | 100% | start locked to 2012-11-05 |  | 160h | 160h |
| 220 | 4.1.6.4 | phase II proposal |  | 2012-11-07 | 218 | 100% | start locked to 2012-11-07 |  | 40h | 40h |
| 221 | 4.1.6.5 | two channel design paper |  | 2013-04-08 | 219 | 100% | start locked to 2013-04-08 | spuler [50%] | 80h | 80h |
| 222 | 4.1.6.6 | Photodigm replacement lasers arrived |  | 2013-04-30 |  | 100% | start locked to 2013-04-30 |  | 8h | 8h |
| 223 | 4.1.6.7 | travel to MSU to test 2 channel |  | 2013-05-07 |  | 100% | start locked to 2013-05-07 |  | 32h | 32h |

| ID | WBS | Task | Start | Predecessors | Complete | Constraint | Resources | Work | Actual work |
| --- | --- | --- | --- | --- | --- | --- | --- | --- | --- |
| 224 | 4.1.7 | **Critical improvements** |  |  |  | start no earlier than 2013-05-24 |  |  |  |
| 225 | 4.1.7.1 | order parts wait delivery |  |  | 100% |  |  | 480h | 480h |
| 226 | 4.1.7.2 | Install new window in hatch | 2013-10-21 | 225 | 100% | start locked to 2013-10-21 |  | 24h | 24h |
| 227 | 4.1.7.3 | Repasky visit | 2013-10-21 |  | 100% | start locked to 2013-10-21 |  | 40h | 40h |
| 228 | 4.1.7.4 | install new lasers | 2013-10-28 |  | 100% | start locked to 2013-10-28 |  | 39h | 39h |
| 229 | 4.1.7.5 | complete M2 tests | 2014-01-24 | 228 | 100% | start locked to 2014-01-24 |  | 80h | 80h |
| 230 | 4.1.7.6 | shared telescope implement/test |  | 227 | 100% |  |  | 160h | 160h |
| 231 | 4.1.7.7 | add second channel |  | 230 | 100% |  |  | 160h | 160h |
| 232 | 4.1.7.8 | increase on/off switch speed |  | 230, 225, 231 | 100% |  |  | 160h | 160h |
| 233 | 4.1.7.9 | etalon filter implement/test |  | 232 | 100% |  |  | 120h | 120h |
| 234 | 4.1.7.10 | **move to x-rail frame** |  |  |  | start no earlier than 2014-02-19 |  |  |  |
| 235 | 4.1.7.10.1 | x-rail frame |  | 233 | 100% |  | erickson [50%] | 60h | 60h |
| 236 | 4.1.7.10.2 | rewire | 2014-03-27 | 235 | 100% | start locked to 2014-03-27 |  | 40h | 40h |
| 237 | 4.1.7.10.3 | rack mount |  | 236 | 100% |  |  | 40h | 40h |
| 238 | 4.1.7.10.4 | DC supplies |  | 237 | 100% |  |  | 24h | 24h |
| 239 | 4.1.7.11 | **improve control program** |  | 233 |  | start no earlier than 2014-03-11 |  |  |  |
| 240 | 4.1.7.11.1 | switch timing |  |  | 100% |  |  | 80h | 80h |
| 241 | 4.1.7.11.2 | lambda control |  | 240 | 100% |  |  | 80h | 80h |
| 242 | 4.1.7.12 | 1x1 switch lead time | 2014-02-11 |  | 100% | start locked to 2014-02-11 |  | 208h | 208h |
| 243 | 4.1.7.13 | implement 1x1 switches |  | 242 | 100% |  |  | 80h | 80h |
| 244 | 4.1.7.14 | **improve blocking** |  |  |  | start no earlier than 2014-02-11 |  |  |  |
| 245 | 4.1.7.14.1 | 25F etalon lead time | 2014-02-11 |  | 100% | start locked to 2014-02-11 |  | 472h | 472h |
| 246 | 4.1.7.14.2 | implement 25F etalon | 2014-05-07 | 245 | 100% | start locked to 2014-05-07 |  | 24h | 24h |
| 247 | 4.1.7.14.3 | 450pm NBF lead time | 2014-02-24 |  | 100% | start locked to 2014-02-24 |  | 320h | 320h |
| 248 | 4.1.7.14.4 | implement 450pm NBF |  | 247 | 100% |  |  | 16h | 16h |

| ID | WBS | Task | Duration | Start | Predecessors | Complete | Constraint | Resources | Work | Actual work |
| --- | --- | --- | --- | --- | --- | --- | --- | --- | --- | --- |
| 249 | 4.1.8 | **Validation of improvements** |  |  |  |  | start no earlier than 2014-04-25 |  |  |  |
| 250 | 4.1.8.1 | FL sonde launches |  | 2014-04-25 | 239, 243 | 100% | start locked to 2014-04-25 |  | 240h | 240h |
| 251 | 4.1.8.2 | FRAPPE with AERI |  | 2014-07-01 |  | 100% | start locked to 2014-07-01 |  | 352h | 352h |
| 252 | 4.1.8.3 | FRAPPE data quality |  |  | 251 | 100% |  |  | 160h | 160h |
| 253 | 4.1.8.4 | Write proposal for Phase C (containerize) |  | 2014-09-01 |  | 100% | start locked to 2014-09-01 |  | 160h | 160h |
| 254 | 4.1.8.5 | Redux proposal for Phase C (containerize) |  |  |  | 100% |  |  | 80h | 80h |
| 255 | 4.1.9 | **PECAN (field test)** |  |  |  |  | start no earlier than 2015-04-27 |  |  |  |
| 256 | 4.1.9.1 | PECAN pack |  | 2015-04-27 |  | 100% | start locked to 2015-04-27 | spuler; erickson | 72h | 72h |
| 257 | 4.1.9.2 | PECAN ship |  | 2015-05-14 |  | 100% | start locked to 2015-05-14 |  | 8h | 8h |
| 258 | 4.1.9.3 | PECAN setup |  | 2015-05-18 |  | 100% | start locked to 2015-05-18 | spuler | 64h | 64h |
| 259 | 4.1.9.4 | setup part II |  | 2015-05-26 | 258 | 100% | start locked to 2015-05-26 | spuler | 8h | 8h |
| 260 | 4.1.9.5 | PECAN remote ops | 39d | 2015-05-29 |  | 100% | start locked to 2015-05-29 |  | 312h | 312h |
| 261 | 4.1.9.6 | Amin Nehrir on site |  | 2015-06-28 |  | 100% | start locked to 2015-06-28 |  | 112h | 112h |
| 262 | 4.1.9.7 | PECAN teardown |  |  | 260 | 100% |  | spuler | 48h | 48h |
| 263 | 4.1.9.8 | Weigh the WV DIAL |  |  | 262 | 100% |  |  | 8h | 8h |
| 264 | 4.1.10 | **Phase C Development** |  |  |  |  |  |  |  |  |
| 265 | 4.1.10.1 | **Phase C1 container design/build** |  |  |  |  | start no earlier than 2015-02-02 |  |  |  |
| 266 | 4.1.10.1.1 | design |  | 2015-02-19 | 249 | 100% | start locked to 2015-02-19 | spuler [15%]; ranson [75%]; erickson [10%] | 480h | 480h |
| 267 | 4.1.10.1.2 | order window |  | 2015-07-21 |  | 100% | start locked to 2015-07-21 | spuler [10%] | 61.6h | 61.6h |
| 268 | 4.1.10.1.3 | order shelter Ekko |  | 2015-08-24 | 266 | 100% | start locked to 2015-08-24 | DFS | 440h | 440h |
| 269 | 4.1.10.1.4 | fabricate isolation mounts |  | 2015-08-18 | 266 | 100% | start locked to 2015-08-18 | DFS | 160h | 160h |
| 270 | 4.1.10.1.5 | fabricate window mount |  | 2015-08-18 | 266 | 100% | start locked to 2015-08-18 | DFS | 160h | 160h |
| 271 | 4.1.10.1.6 | fabricate bench components |  | 2015-08-18 | 266 | 100% | start locked to 2015-08-18 | DFS | 160h | 160h |
| 272 | 4.1.10.1.7 | install parts |  | 2015-11-09 | 268, 271 | 100% | start locked to 2015-11-09 |  | 40h | 40h |
| 273 | 4.1.10.1.8 | integrate bench into container |  | 2015-11-20 | 272, 274 | 100% | start locked to 2015-11-20 |  | 40h | 40h |
| 274 | 4.1.10.1.9 | light-weight primary mount |  | 2015-10-30 |  | 100% | start locked to 2015-10-30 | DFS | 120h | 120h |
| 275 | 4.1.10.1.10 | oscilloscope integrated |  | 2015-10-15 |  | 100% | start locked to 2015-10-15 |  | 80h | 80h |
| 276 | 4.1.10.1.11 | order 8-ch MCSC |  | 2015-10-26 |  | 100% | start locked to 2015-10-26 |  | 391h | 391h |

| ID | WBS | Task | Start | Predecessors | Complete | Constraint | Resources | Work | Actual work |
| --- | --- | --- | --- | --- | --- | --- | --- | --- | --- |
| 277 | 4.1.10.2 | **Phase C2 algorithms** |  |  |  | start no earlier than 2015-02-02 |  |  |  |
| 278 | 4.1.10.2.1 | search for candidate | 2015-02-02 |  | 100% | start locked to 2015-02-02 | spuler [10%] | 60h | 60h |
| 279 | 4.1.10.2.2 | Develop algorithms | 2015-06-16 | 278 | 100% | start locked to 2015-06-16 | spuler [25%] | 320h | 320h |
| 280 | 4.1.10.2.3 | integrate into code | 2015-08-14 | 279 | 100% | start locked to 2015-08-14 |  | 320h | 320h |
| 281 | 4.1.10.2.4 | RD correction with Hohenheim |  |  | 100% | start no earlier than 2015-10-22 | spuler [5%] | 40h | 40h |
| 282 | 4.1.10.3 | **Phase C3 refine** |  |  |  | start no earlier than 2015-02-02 |  |  |  |
| 283 | 4.1.10.3.1 | design and replace near field channel | 2015-04-16 |  | 100% | start locked to 2015-04-16 | spuler | 80h | 80h |
| 284 | 4.1.10.3.2 | test asynchronous switching | 2015-09-14 |  | 100% | start locked to 2015-09-14 | spuler | 80h | 80h |
| 285 | 4.1.10.3.3 | **TPA** |  |  |  |  |  |  |  |
| 286 | 4.1.10.3.3.1 | ThorLabs NRE TPA | 2015-03-05 |  | 100% | start locked to 2015-03-05 |  | 480h | 480h |
| 287 | 4.1.10.3.3.2 | in-line circulator | 2015-09-08 | 286 | 100% | start locked to 2015-09-08 | spuler | 160h | 160h |
| 288 | 4.1.10.3.3.3 | test TPAs | 2015-10-06 | 287 | 100% | start locked to 2015-10-06 | spuler [25%] | 43.25h | 43.25h |
| 289 | 4.1.10.4 | **Phase C4 integration** |  |  |  |  |  |  |  |
| 290 | 4.1.10.4.1 | design interlock cables | 2015-10-22 |  | 100% | start locked to 2015-10-22 | erickson [30%] | 80h | 80h |
| 291 | 4.1.10.4.2 | **power monitor integrated** | 2015-10-15 |  | 100% | start locked to 2015-10-15 |  | 163.2h | 163.2h |
| 292 | 4.1.10.4.2.1 | power monitor integrated | 2015-10-15 |  | 100% | start locked to 2015-10-15 |  | 144h | 144h |
| 293 | 4.1.10.4.2.2 | power monitor integrated |  |  | 100% | start no earlier than 2016-01-06 |  | 19.2h | 19.2h |
| 294 | 4.1.10.4.3 | **Thorlabs error trapping** | 2015-10-26 |  | 100% | start locked to 2015-10-26 |  | 102h | 102h |
| 295 | 4.1.10.4.3.1 | Thorlabs error trapping | 2015-10-26 |  | 100% | start locked to 2015-10-26 |  | 64h | 64h |
| 296 | 4.1.10.4.3.2 | Thorlabs error trapping |  |  | 100% | start no earlier than 2016-03-07 |  | 38h | 38h |
| 297 | 4.1.10.4.4 | integrate/test MCSC |  |  | 100% | start no earlier than 2015-12-07 |  | 67.2h | 67.2h |
| 298 | 4.1.10.4.5 | integrate/test network switches |  |  | 100% | start no earlier than 2015-12-28 | spuler | 24h | 24h |
| 299 | 4.1.10.4.6 | integrate/test pulse generator |  |  | 100% | start no earlier than 2016-01-04 | spuler | 24h | 24h |
| 300 | 4.1.10.4.7 | integrate/test rack mount UPS |  |  | 100% | start no earlier than 2015-12-31 | spuler [50%] | 24h | 24h |
| 301 | 4.1.10.4.8 | install rsync client |  | 300 | 100% | start no earlier than 2016-01-05 | spuler | 16h | 16h |
| 302 | 4.1.10.4.9 | integrate/test weather station |  |  | 100% | start no earlier than 2016-01-13 | erickson | 24h | 24h |
| 303 | 4.1.10.4.10 | software task (rsync) |  |  | 100% | start no earlier than 2016-01-18 | dixon | 80h | 80h |

| ID | WBS | Task | Start | Predecessors | Complete | Constraint | Resources | Work | Actual work |
| --- | --- | --- | --- | --- | --- | --- | --- | --- | --- |
| 304 | 4.1.11 | **FY16 ABR tasks** |  |  |  | start no earlier than 2015-10-01 |  |  |  |
| 305 | 4.1.11.1 | PECAN data QC | 2015-10-01 |  | 100% | start locked to 2015-10-01 | spuler; weckwerth | 403.2h | 403.2h |
| 306 | 4.1.11.2 | WVDIAL inter comparisons | 2015-10-02 |  | 100% | start locked to 2015-10-02 | weckwerth | 691.2h | 691.2h |
| 307 | 4.1.11.3 | Write MRI | 2015-11-04 |  | 100% | start locked to 2015-11-04 | spuler [25%] | 96h | 96h |
| 308 | 4.1.11.4 | Phase C report |  |  | 100% | start no earlier than 2016-01-20 | spuler [10%] | 40h | 40h |
| 309 | 4.1.11.5 | field enclosure tests |  | 265, 282 | 100% | start no earlier than 2016-03-22 | spuler [25%] | 138h | 138h |
| 310 | 4.1.11.6 | Fix/handle issues following Phase C upgrade, implementation. | 2016-04-06 |  | 100% | start locked to 2016-04-06 | spuler | 480h | 480h |
| 311 | 4.1.11.7 | Window Order |  |  | 100% | start no earlier than 2016-05-12 |  | 408h | 408h |
| 312 | 4.1.11.8 | Local Field Catalog (including scripts) |  |  | 100% | start no earlier than 2016-05-02 | spuler [50%] | 160h | 160h |
| 313 | 4.1.11.9 | MSU/NCAR inter comparison |  |  | 100% | start no earlier than 2016-07-11 |  | 320h | 320h |
| 314 | 4.1.12 | Matlab realtime script |  |  | 100% | start no earlier than 2016-08-12 |  | 112h | 112h |
| 315 | 4.2 | **FY17 ABR request** |  |  |  |  |  |  |  |
| 316 | 4.2.1 | Field Catalog tools (color bar select period) |  |  | 100% | start no earlier than 2016-10-01 |  | 2080h | 2080h |
| 317 | 4.2.2 | install 220V step down transformer, |  |  | 100% | start no earlier than 2016-10-19 | erickson [75%] | 90h | 90h |
| 318 | 4.2.3 | secure mounts wiring |  |  | 100% | start no earlier than 2016-12-20 | erickson | 192h | 192h |
| 319 | 4.2.4 | cleanly pack supplies in container | 2016-10-07 | 318 | 100% |  | erickson | 24h | 24h |
| 320 | 4.2.5 | OSA Leipzig conference |  |  | 100% | start no earlier than 2016-11-13 | spuler | 40h | 40h |
| 321 | 4.3 | **DLB-HSRL development** |  |  |  | start no earlier than 2016-06-06 |  |  |  |
| 322 | 4.3.1 | Initial Purchases |  |  | 100% | start no earlier than 2016-07-26 |  | 160h | 160h |
| 323 | 4.3.2 | Demonstrate Rb as Filter |  | 322 | 100% |  |  | 160h | 160h |
| 324 | 4.3.3 | Demonstrate TSOA operation |  | 322 | 100% |  |  | 320h | 320h |
| 325 | 4.3.4 | scan 3GHz elalon |  |  | 100% | start no earlier than 2016-10-27 | hayman [25%] | 24h | 24h |
| 326 | 4.3.5 | order parts for night demo |  |  | 100% | start no earlier than 2016-11-14 | spuler [25%] | 16h | 16h |
| 327 | 4.3.6 | Nighttime demo |  |  | 100% | start no earlier than 2016-11-28 |  | 120h | 120h |
| 328 | 4.3.7 | Processing Software |  |  | 100% | start no earlier than 2016-11-15 |  | 480h | 480h |
| 329 | 4.3.8 | etalon order |  |  | 100% | start no earlier than 2016-12-14 |  | 640h | 640h |
| 330 | 4.3.9 | Data Validation with GV-HSRL |  |  | 100% | start no earlier than 2017-04-21 |  | 480h | 480h |
| 331 | 4.3.10 | Second Purchases |  |  | 100% | start no earlier than 2017-01-19 |  | 200h | 200h |
| 332 | 4.3.11 | Test Zeeman line splitting |  |  | 100% | start no earlier than 2017-01-18 |  | 120h | 120h |
| 333 | 4.3.12 | Cable, supply block for pulser OEM |  |  | 100% | start no earlier than 2017-02-24 | erickson [25%] | 40h | 40h |
| 334 | 4.3.13 | Combine with WV-DIAL |  | 323, 324, 331 | 100% | start no earlier than 2017-03-22 |  | 320h | 320h |

| ID | WBS | Task | Type | Duration | Start | Predecessors | Complete | Constraint | Resources | Work | Actual work |
| --- | --- | --- | --- | --- | --- | --- | --- | --- | --- | --- | --- |
| 335 | 4.3.14 | **Software Control** |  |  |  | 322 | 100% |  |  | 1280h | 1280h |
| 336 | 4.3.14.1 | Software Control |  |  |  |  | 100% |  |  | 352h | 352h |
| 337 | 4.3.14.2 | Software Control |  |  |  |  | 100% | start no earlier than 2017-01-20 |  | 928h | 928h |
| 338 | 4.3.15 | First combined Light | milestone |  |  | 334, 335 |  |  |  |  |  |
| 339 | 4.3.16 | Final Report | milestone |  |  |  |  | start no earlier than 2017-08-04 |  |  |  |
| 340 | 4.4 | **PERDIGAO** |  |  |  |  |  |  |  |  |  |
| 341 | 4.4.1 | prep container |  |  |  |  | 100% | start no earlier than 2017-01-13 | erickson | 80h | 80h |
| 342 | 4.4.2 | PI equipment due at EOL | milestone |  |  |  |  | start no earlier than 2017-01-27 |  |  |  |
| 343 | 4.4.3 | Shipment departs EOL | milestone |  |  |  |  | start no earlier than 2017-02-10 |  |  |  |
| 344 | 4.4.4 | shipping |  |  |  | 341 | 100% | start no earlier than 2017-02-10 |  | 280h | 280h |
| 345 | 4.4.5 | setup |  | 5d | 2017-04-21 | 344 | 100% | start locked to 2017-04-21 | erickson | 40h | 40h |
| 346 | 4.4.6 | IOP |  |  | 2017-05-01 | 345 | 100% | start locked to 2017-05-01 |  | 272h | 272h |
| 347 | 4.4.7 | teardown |  | 5d | 2017-06-19 | 346 | 100% | start locked to 2017-06-19 | erickson | 40h | 40h |
| 348 | 4.4.8 | ILRC |  |  |  |  | 100% | start no earlier than 2017-06-25 | spuler | 40h | 40h |
| 349 | 4.4.9 | shipping |  |  |  | 347 | 100% | start no earlier than 2017-07-17 |  | 328h | 328h |
| 350 | 4.5 | Construct first MPD telescope |  |  |  | 345 | 100% | start no earlier than 2017-03-20 |  | 160h | 160h |
| 351 | 4.6 | Construct first MPD frame |  |  |  | 350 | 100% | start no earlier than 2017-03-20 |  | 160h | 160h |
| 352 | 4.7 | **LAFE (DOE)** |  |  |  |  |  |  |  |  |  |
| 353 | 4.7.1 | prep |  |  |  |  | 100% | start no earlier than 2017-07-11 | erickson | 80h | 80h |
| 354 | 4.7.2 | shipping | milestone |  |  | 353 |  | start no earlier than 2017-07-26 | erickson |  |  |
| 355 | 4.7.3 | ops |  | 23d | 2017-08-01 | 354 | 100% | start locked to 2017-08-01 |  | 184h | 184h |
| 356 | 4.7.4 | teardown |  |  |  | 355 | 100% |  | erickson | 40h | 40h |
| 357 | 4.7.5 | pickup | milestone |  |  |  |  | start no earlier than 2017-09-05 |  |  |  |
| 358 | 4.8 | **RELAMPAGO** |  |  |  |  |  |  |  |  |  |
| 359 | 4.8.1 | prepare |  |  |  |  |  | start no earlier than 2018-07-27 |  | 160h |  |
| 360 | 4.8.2 | shipping |  |  |  | 359 |  |  |  | 340h |  |
| 361 | 4.8.3 | setup (crew phase 1 ? ) |  |  |  | 360 |  |  |  | 40h |  |
| 362 | 4.8.4 | IOP |  | 32d | 2018-11-01 | 361 |  | start locked to 2018-11-01 |  | 256h |  |
| 363 | 4.8.5 | crew phase 1 |  | 9d |  |  |  | start no earlier than 2018-10-22 | spuler; erickson | 144h |  |
| 364 | 4.8.6 | crew phase 2 |  | 3d |  |  |  | start no earlier than 2018-12-13 | erickson; spuler | 48h |  |
| 365 | 4.8.7 | teardown (crew phase 2 ? ) |  |  |  | 362 |  |  |  | 24h |  |
| 366 | 4.8.8 | shipping |  |  |  | 365 |  |  |  | 340h |  |

| ID | WBS | Task | Type | Duration | Start | Predecessors | Complete | Constraint | Resources | Work | Actual work |
| --- | --- | --- | --- | --- | --- | --- | --- | --- | --- | --- | --- |
| 367 | 4.9 | **FACT (proposed)** |  |  |  |  |  |  |  |  |  |
| 368 | 4.9.1 | prep |  |  |  |  |  | start no earlier than 2018-11-30 | erickson | 80h |  |
| 369 | 4.9.2 | shipping | milestone |  |  | 368 |  | start no earlier than 2018-12-30 | erickson |  |  |
| 370 | 4.9.3 | ops |  | 23d | 2019-01-07 | 369 |  | start locked to 2019-01-07 |  | 184h |  |
| 371 | 4.9.4 | teardown |  |  |  | 370 |  |  | erickson | 40h |  |
| 372 | 4.9.5 | pickup | milestone |  |  |  |  | start no earlier than 2019-02-16 |  |  |  |
| 373 | 4.10 | CHEESHEAD (proposed IOP) |  |  |  |  |  | start no earlier than 2019-06-17 |  | 640h |  |
| 374 | 4.11 | Joe Fernando Halifax ONR |  |  |  |  |  | start no earlier than 2019-08-01 |  | 336h |  |
| 375 | 4.12 | PRECIP Taiwan (proposed IOP) |  | 56d | 2020-05-25 |  |  | start locked to 2020-05-25 |  | 448h |  |
| 376 | 4.13 | **MPD Testbed Development** |  |  |  |  |  |  |  |  |  |
| 377 | 4.13.1 | Award begins | milestone |  |  |  |  | start no earlier than 2016-09-15 |  |  |  |
| 378 | 4.13.2 | Finalize Design |  |  |  |  | 100% | start no earlier than 2016-10-03 | spuler | 480h | 480h |
| 379 | 4.13.3 | MCS development |  |  |  |  | 100% | start no earlier than 2016-10-04 | carnes [15%] | 320h | 320h |
| 380 | 4.13.4 | Validate MCS |  |  |  |  | 100% | start no earlier than 2017-10-18 | stillwell | 120h | 120h |
| 381 | 4.13.5 | MCS 5-unit build |  |  |  | 379, 380 | 40% | start no earlier than 2017-11-14 | spuler [10%]; erickson [25%] | 160h | 64.4h |
| 382 | 4.13.6 | Laser Transmitter |  |  |  | 378 | 100% |  | repasky | 960h | 960h |
| 383 | 4.13.7 | Transciever |  |  |  | 378 | 100% | start no earlier than 2017-03-31 | repasky | 1440h | 1440h |
| 384 | 4.13.8 | Alluna Mirror Fabrication |  |  |  | 350 | 97% |  |  | 1200h | 1160h |
| 385 | 4.13.9 | Reciever |  |  |  | 382 | 74% |  |  | 1440h | 1072h |
| 386 | 4.13.10 | Frame 3-unit-clone build |  |  |  |  | 12% | start no earlier than 2017-12-08 | erickson [75%] | 240h | 30h |
| 387 | 4.13.11 | Integrate parts in frames? |  |  |  | 386 |  | start no earlier than 2018-05-01 |  | 160h |  |
| 388 | 4.13.12 | EKTO fabrication |  |  |  |  |  | start no earlier than 2018-02-04 |  | 488h |  |
| 389 | 4.13.13 | Enclosure assembly |  |  |  | 391, 388 |  | start no earlier than 2018-04-28 | erickson [50%] | 160h |  |
| 390 | 4.13.14 | Integration in Enclosures |  |  |  | 385, 389 |  | start no earlier than 2018-06-01 |  | 960h |  |
| 391 | 4.13.15 | Enclosure & Telescope design |  |  |  | 378 | 100% | start no earlier than 2016-11-23 | bernatsky [30%] | 440h | 440h |
| 392 | 4.13.16 | Updating Software |  |  |  | 378 | 34% | start no earlier than 2017-08-19 | schoenrock [15%]; stillwell [15%] | 440h | 151.2h |
| 393 | 4.13.17 | Final Assembly and Validation |  |  |  | 390, 391, 389 |  | start no earlier than 2018-08-31 |  | 1280h |  |
| 394 | 4.13.18 | Project end | milestone |  |  |  |  | start no earlier than 2019-08-31 |  |  |  |

| ID | WBS | Task | Type | Duration | Start | Predecessors | Constraint | Resources | Work |
| --- | --- | --- | --- | --- | --- | --- | --- | --- | --- |
| 395 | 5 | **Temperature Profiler (ASP)** |  |  |  |  |  |  |  |
| 396 | 5.1 | Robert Stillwell's first day | milestone |  |  |  | start no earlier than 2017-08-28 |  |  |
| 397 | 5.2 | End of project | milestone |  |  |  | start no earlier than 2019-08-28 |  |  |
| 398 | 6 | **HCR** |  |  |  |  | start no earlier than 2016-09-30 |  |  |
| 399 | 6.1 | FY16 ABR tasks |  |  |  |  | start no earlier than 2016-09-30 |  | 8h |
| 400 | 6.2 | FY17 ABR request |  |  |  |  | start no earlier than 2016-09-30 |  | 8h |
| 401 | 6.3 | **Proposed field projects** |  |  |  |  | start no earlier than 2016-09-30 |  |  |
| 402 | 6.3.1 | SOCRATES-TEST |  |  |  |  | start no earlier than 2016-09-12 |  | 32h |
| 403 | 6.3.2 | **ARISTO17** |  |  |  |  | start no earlier than 2017-01-04 |  |  |
| 404 | 6.3.2.1 | Payload Integration |  | 33d |  |  | start no earlier than 2017-01-04 | lovell [15%]; emmett [5%] | 52.8h |
| 405 | 6.3.2.2 | HCR Rack Installation | milestone |  | 2017-01-17 |  | start locked to 2017-01-17 |  |  |
| 406 | 6.3.2.3 | HCR system installation |  | 1d |  |  | start no earlier than 2017-02-06 | lovell; emmett [50%]; hwang [25%] | 14h |
| 407 | 6.3.2.4 | Flight test period |  | 15d |  |  | start no earlier than 2017-02-20 | lovell; hwang; tsai [30%]; burghart; ellis; dixon [50%] | 576h |
| 408 | 6.3.2.5 | Payload Deintegration |  | 6d |  |  | start no earlier than 2017-03-13 | lovell [50%]; emmett [20%] | 33.6h |
| 409 | 6.3.3 | **SOCRATES** |  |  |  |  | start no earlier than 2017-11-01 |  |  |
| 410 | 6.3.3.1 | Upload & test flights |  | 51d |  |  | start no earlier than 2017-11-01 | lovell [30%]; ellis [20%]; hwang [20%]; tsai [10%]; burghart [30%] | 448.8h |
| 411 | 6.3.3.2 | GV Field phase (GV depart/return) |  |  |  |  | start no earlier than 2018-01-10 |  | 304h |
| 412 | 6.3.3.3 | **Deployment period** |  |  |  |  | start no earlier than 2018-01-15 |  |  |
| 413 | 6.3.3.3.1 | crew phase 1 |  | 20d |  |  | start no earlier than 2018-01-11 | burghart; tsai; lovell; vivek | 640h |
| 414 | 6.3.3.3.2 | crew phase 2 |  | 20d |  |  | start no earlier than 2018-02-01 | ellis; loew; emmett | 480h |
| 415 | 6.3.3.4 | In-field Pack up & uninstallation |  | 7d |  |  | start no earlier than 2018-02-28 | lovell [50%] | 28h |
| 416 | 6.3.4 | OTREC |  |  |  |  | start no earlier than 2019-08-01 |  | 344h |
| 417 | 6.3.5 | KAMP |  |  |  |  | start no earlier than 2019-06-03 |  | 344h |
| 418 | 6.4 | **Development** |  |  |  |  | start no earlier than 2016-09-30 |  |  |
| 419 | 6.4.1 | **Post-SOCRATES-TEST** |  |  |  | 402 | start no earlier than 2016-09-30 |  |  |
| 420 | 6.4.1.1 | Spatial FOG issues |  | 20d |  |  | start no earlier than 2016-09-30 | burghart [75%] | 120h |
| 421 | 6.4.1.2 | Pod wiring rework (Design - 2nd INS) |  | 30d |  |  | start no earlier than 2016-09-30 | hwang; lovell | 480h |
| 422 | 6.4.1.3 | Pod wiring Implementation |  | 20d |  |  | start no earlier than 2016-11-29 | emmett | 160h |
| 423 | 6.4.1.4 | RS232 Wiring Test |  |  |  | 422SS+15d |  |  | 8h |
| 424 | 6.4.1.5 | Adaptation of Spectracom |  | 10d |  |  | start no earlier than 2016-12-05 | burghart [50%] | 40h |
| 425 | 6.4.1.6 | Dual INS software adaptation |  | 15d |  | 424 |  | burghart | 120h |
| 426 | 6.4.1.7 | Include new mods after revert back to C-migit version of Software |  | 5d |  | 425 |  | burghart | 40h |
| 427 | 6.4.1.8 | Noise source cal mods - firmware |  | 20d |  |  | start no earlier than 2016-12-05 | loew [5%]; hwang [25%]; tsai [50%]; lovell [10%] | 144h |
| 428 | 6.4.1.9 | Transmit path evaluation |  |  |  | 421 | start no earlier than 2016-11-29 | hwang [50%]; tsai [50%]; lovell [30%] | 312h |
| 429 | 6.4.1.10 | System Integration |  | 7d |  |  | start no earlier than 2017-01-20 |  | 56h |

| ID | WBS | Task | Type | Duration | Predecessors | Complete | Constraint | Resources | Work | Actual work |
| --- | --- | --- | --- | --- | --- | --- | --- | --- | --- | --- |
| 430 | 6.4.1.11 | **Deliverables** |  |  |  |  | start no earlier than 2016-12-06 |  |  |  |
| 431 | 6.4.1.11.1 | DFS adapting plate - SDN500 |  |  |  | 100% | start no earlier than 2016-12-06 |  | 8h | 8h |
| 432 | 6.4.2 | **Post-ARISTO17** |  |  | 403 |  | start no earlier than 2017-03-20 |  |  |  |
| 433 | 6.4.2.1 | Address issues identified |  | 30d |  | 100% | start no earlier than 2017-03-20 | burghart [75%]; tsai [50%]; lovell [25%]; ellis [25%]; dixon [20%] | 468h | 468h |
| 434 | 6.4.2.2 | **Software** |  |  |  |  |  |  |  |  |
| 435 | 6.4.2.2.1 | Reconfigure System software onto different HD (partition) |  | 5d |  | 100% | start no earlier than 2017-10-16 | burghart | 40h | 40h |
| 436 | 6.4.2.2.2 | Remote status monitoring |  | 30d | 420, 435 |  |  | burghart | 240h |  |
| 437 | 6.4.2.2.3 | 1-hr quick-look img generation |  |  |  |  | start no earlier than 2017-10-16 |  | 8h |  |
| 438 | 6.4.2.2.4 | Coherent Power Noise Estimate |  |  |  |  | start no earlier than 2017-10-09 |  | 8h |  |
| 439 | 6.4.2.3 | **Hardware** |  |  |  |  |  |  |  |  |
| 440 | 6.4.2.3.1 | Set up HCR in lab |  | 3d |  | 100% | start no earlier than 2017-07-10 | emmett | 24h | 24h |
| 441 | 6.4.2.3.2 | ARISTO17 Engineering Evaluation |  | 23d | 440 | 75% | start no earlier than 2017-07-26 | tsai [50%] | 92h | 69h |
| 442 | 6.4.2.3.3 | Pulse-to-pulse NSCAL |  | 20d | 441 | 50% |  | tsai [50%]; emmett [10%] | 92h | 46h |
| 443 | 6.4.2.3.4 | Receiver Calibration |  | 15d | 442 |  |  | tsai [50%]; emmett [10%]; lovell [20%] | 96h |  |
| 444 | 6.4.2.4 | Advanced Navigation Return/Refud |  |  |  | 100% | start no earlier than 2017-04-17 |  | 8h | 8h |
| 445 | 6.4.2.5 | SDN500 Engineering Report & Discussion |  | 15d |  | 100% | start no earlier than 2017-04-17 |  | 120h | 120h |
| 446 | 6.4.2.6 | SDN500 Procurement - 6/12 |  | 3d | 445 | 100% | start no earlier than 2017-06-12 | tsai [20%] | 4.8h | 4.8h |
| 447 | 6.4.2.7 | SDN500 Delivery and Integration (10wks) |  | 15d | 446FS+50d | 80% | start no earlier than 2017-09-22 | burghart [50%]; lovell [50%] | 120h | 96h |
| 448 | 6.4.2.8 | SDN500 Delivery (Scheduled) (9/13 ship date) | milestone |  |  |  | start no earlier than 2017-09-15 |  |  |  |
| 449 | 6.4.2.9 | SDN500 Drop Dead Delivery date - 9/15 | milestone |  |  |  | start no earlier than 2017-09-15 |  |  |  |
| 450 | 6.4.2.10 | SDN500 Sample Data - send to vendor |  | 3d |  | 100% | start no earlier than 2017-06-26 | burghart | 24h | 24h |
| 451 | 6.4.2.11 | SDN500 Firmware Update - follow up |  |  |  |  | start no earlier than 2017-10-16 | tsai | 8h |  |
| 452 | 6.4.2.12 | Manufacturing second SDN plate |  |  |  | 100% | start no earlier than 2017-08-01 | DFS; emmett [50%] | 8h | 8h |
| 453 | 6.4.2.13 | SDN500 electrical wiring |  |  | 452SS |  | start no earlier than 2017-10-11 | emmett | 40h |  |
| 454 | 6.4.2.14 | FAA Documentation |  | 10d |  | 100% | start no earlier than 2017-10-09 | tsai [50%] | 40h | 40h |
| 455 | 6.4.2.15 | HCR Operations Manual |  | 3d |  |  | start no earlier than 2017-12-11 | tsai | 24h |  |

Notes:
- 446: Completed by 7/27
- 450: October 4, 2017

| ID | WBS | Task | Type | Duration | Start | Predecessors | Complete | Constraint | Resources | Work | Actual work |
| --- | --- | --- | --- | --- | --- | --- | --- | --- | --- | --- | --- |
| 456 | 6.4.2.16 | **Supports** |  |  |  |  |  | start no earlier than 2017-05-09 |  |  |  |
| 457 | 6.4.2.16.1 | Tool purchase & parts inventory |  | 15d |  |  |  | start no earlier than 2017-08-01 | lovell [50%]; emmett [25%] | 90h |  |
| 458 | 6.4.2.16.2 | Spare part/oscillator purchase |  | 4d |  |  | 100% | start no earlier than 2017-07-03 | tsai [15%] | 3.6h | 3.6h |
| 459 | 6.4.2.16.3 | Sea Container - Purchase & Delivery |  |  |  |  | 100% | start no earlier than 2017-04-27 |  | 120h | 120h |
| 460 | 6.4.2.16.4 | Sea Container - E-track & painting |  | 40d |  | 459 | 100% | start no earlier than 2017-05-08 | DFS; emmett [5%] | 12h | 12h |
| 461 | 6.4.2.16.5 | **Yellow Cart** |  |  |  |  |  |  |  |  |  |
| 462 | 6.4.2.16.5.1 | E-track brackets (purchase and installation) |  | 2d |  | 457 |  |  | lovell [33%] | 5.28h |  |
| 463 | 6.4.2.16.5.2 | Cradle support installation |  | 4d |  | 462SS |  | start no earlier than 2017-10-23 | lovell [33.3%] | 10.56h |  |
| 464 | 6.4.2.16.5.3 | Remove wheel guards |  | 4d |  | 463SS |  | finish no later than 2017-10-27 | lovell [33.3%] | 10.56h |  |
| 465 | 6.4.2.16.6 | **Orange cart** |  |  |  |  |  | start no earlier than 2017-10-23 |  |  |  |
| 466 | 6.4.2.16.6.1 | Angle brackets for bluejack |  | 2d |  |  |  | finish no later than 2017-10-27 | lovell [25%] | 4h |  |
| 467 | 6.4.2.16.6.2 | Remove foot break (quick release) |  | 2d |  | 466SS |  | finish no later than 2017-10-27 | lovell [25%] | 4h |  |
| 468 | 6.4.2.16.6.3 | E-track brackets - purchase and installation |  | 2d |  | 467SS |  | finish no later than 2017-10-27 | lovell [25%] | 4h |  |
| 469 | 6.4.2.16.6.4 | Mods on the orange cart to prevent sagging (drill holes) |  | 2d |  | 468SS |  | finish no later than 2017-10-27 | lovell [25%] | 4h |  |
| 470 | 6.4.2.16.7 | Nosecone cradle manufacturing |  | 5d |  |  | 100% | start no earlier than 2017-08-21 | lovell | 40h | 40h |
| 471 | 6.4.2.16.8 | Blue Jack Modifications |  | 0.5d |  | 469 |  | start no earlier than 2017-10-25 | emmett [50%]; lovell [50%] | 8h |  |
| 472 | 6.4.2.16.9 | PVC pipe rollers |  | 0.5d |  |  |  | finish no later than 2017-10-27 | lovell | 8h |  |
| 473 | 6.4.2.16.10 | Test equipment calibration |  |  |  |  |  | start no earlier than 2018-03-01 |  | 40h |  |
| 474 | 6.4.3 | **Pre-SOCRATES** |  |  |  |  |  |  |  |  |  |
| 475 | 6.4.3.1 | SOCRATES ship date - 9/29 | milestone |  |  |  |  | start no earlier than 2017-10-30 |  |  |  |
| 476 | 6.4.3.2 | Prepare shipment |  | 15d |  |  |  | start no earlier than 2017-10-09 | lovell; emmett [20%] | 144h |  |
| 477 | 6.4.3.3 | System test |  | 20d |  | 447 |  | start no earlier than 2017-10-13 | burghart [30%]; lovell [30%]; tsai [25%]; dixon [15%] | 160h |  |
| 478 | 6.4.3.4 | Calibration |  | 5d |  | 477 |  | start no earlier than 2017-11-13 | tsai; burghart [25%]; lovell [50%] | 70h |  |
| 479 | 6.4.3.5 | SOCRATES Upload |  | 20d |  | 478 |  | start no earlier than 2017-11-27 |  | 160h |  |
| 480 | 6.4.3.6 | SOCRATES Test Flights ( 3 TFs ) |  | 4d | 2018-01-02 |  |  | start locked to 2018-01-02 |  | 32h |  |

Notes:
- 462: Purchased. Defer the E-track bracket. Send current working one.
- 463: Install on cart
- 464: Defer task.
- 465: Will use the current existing cart. Defer whole task
- 470: Metal structure.
- 473: Defer task

| ID | WBS | Task | Duration | Predecessors | Constraint | Resources | Work |
| --- | --- | --- | --- | --- | --- | --- | --- |
| 481 | 7 | **SPOL** |  |  |  |  |  |
| 482 | 7.1 | **Proposed field projects** |  |  | start no earlier than 2016-09-30 |  |  |
| 483 | 7.1.1 | **RELAMPAGO** |  |  | start no earlier than 2018-05-15 |  |  |
| 484 | 7.1.1.1 | SPOL tear down & inventory | 40d |  | start no earlier than 2018-05-15 | lovell; emmett; erickson; Bobka; 1-yr Temp Tech; Setup/Teardown Temp Tech | 1920h |
| 485 | 7.1.1.2 | **Shipping** |  |  | start no earlier than 2016-09-30 |  |  |
| 486 | 7.1.1.2.1 | Shiping: Boulder - Houston & Customs | 10d |  | start no earlier than 2018-07-17 |  | 80h |
| 487 | 7.1.1.2.2 | Shipping: Houston - Beunos Aires & Customs | 33d |  | start no earlier than 2018-07-27 |  | 264h |
| 488 | 7.1.1.2.3 | Shipping: B. Aries - Cordoba | 4d |  | start no earlier than 2018-09-11 |  | 32h |
| 489 | 7.1.1.3 | **Setup & Testing** |  |  | start no earlier than 2018-09-17 |  |  |
| 490 | 7.1.1.3.1 | Radar Setup | 20d |  | start no earlier than 2018-09-17 |  | 160h |
| 491 | 7.1.1.3.2 | Configuration & testing | 13d | 490 | start no earlier than 2018-10-15 |  | 104h |
| 492 | 7.1.1.4 | Intensive observing period | 32d |  | start no earlier than 2018-11-01 |  | 256h |
| 493 | 7.1.1.5 | Teardown -1 | 5d |  | start no earlier than 2018-12-16 |  | 40h |
| 494 | 7.1.1.6 | Teardown - 2 (10 days) | 10d |  | start no earlier than 2019-01-03 | emmett; lovell; erickson; 1-yr Temp Tech; Bobka; Setup/Teardown Temp Tech | 480h |
| 495 | 7.2 | **Development** |  |  | start no earlier than 2016-09-30 |  |  |
| 496 | 7.2.1 | **Computers** |  |  | start no earlier than 2017-06-22 |  |  |
| 497 | 7.2.1.1 | PCI brackets for Spol DRX Interface PCB - purchase & installation |  |  | start no earlier than 2017-06-22 |  | 8h |
| 498 | 7.2.2 | **Monitoring and Control** |  |  | start no earlier than 2017-10-11 |  |  |
| 499 | 7.2.2.1 | Rework Temperature Sensors | 30d |  |  | loew; erickson | 480h |
| 500 | 7.2.2.2 | Update monitoring software |  |  |  | dixon | 400h |
| 501 | 7.2.2.3 | update GUI |  | 500SS |  |  | 400h |
| 502 | 7.2.2.4 | Update TXR control after new temps available | 10d | 499 |  | dixon | 80h |
| 503 | 7.2.3 | **Digital Receiver** |  |  | start no earlier than 2017-10-11 |  |  |
| 504 | 7.2.3.1 | Perform testing on new DRX | 10d |  |  | dixon; loew | 160h |
| 505 | 7.2.3.2 | Update trigger box board with optical isolators | 25d |  |  | loew | 200h |
| 506 | 7.2.3.3 | Update FPGA firmware for 16-bit operations | 30d |  |  | loew | 240h |
| 507 | 7.2.3.4 | Update client side software for 16-bit ops | 30d |  |  | dixon | 240h |
| 508 | 7.2.3.5 | Compare moments with RVP8 for QC | 20d | 507 |  | dixon | 160h |
| 509 | 7.2.3.6 | Test spare digital receiver | 40d |  | start no earlier than 2018-03-01 | dixon; loew | 640h |
| 510 | 7.2.3.7 | Update cabling for trigger box | 40d |  | start no earlier than 2018-03-01 | lovell; emmett | 640h |

| ID | WBS | Task | Duration | Predecessors | Complete | Constraint | Resources | Work | Actual work |
| --- | --- | --- | --- | --- | --- | --- | --- | --- | --- |
| 511 | 7.2.4 | **Software** |  |  |  | start no earlier than 2017-10-11 |  |  |  |
| 512 | 7.2.4.1 | Routine monitoring for Xpol power | 50d |  |  |  | dixon | 400h |  |
| 513 | 7.2.4.2 | Routine monitor for noise correlation | 50d | 512SS |  | start no earlier than 2017-10-11 | dixon | 400h |  |
| 514 | 7.2.4.3 | Add temperature & other monitoring data into data stream | 50d | 513SS |  | start no earlier than 2017-10-11 | dixon | 400h |  |
| 515 | 7.2.4.4 | Update software installs on all display hosts | 50d | 514SS |  | start no earlier than 2017-10-11 | dixon | 400h |  |
| 516 | 7.2.5 | **Computer Hardware** |  |  |  | start no earlier than 2017-10-11 |  |  |  |
| 517 | 7.2.5.1 | Install Mgen servers in transmitter container | 30d |  |  | start no earlier than 2017-11-01 | dixon | 240h |  |
| 518 | 7.2.5.2 | Move old Mgen servers to control role | 30d |  |  | start no earlier than 2017-11-01 | dixon | 240h |  |
| 519 | 7.2.5.3 | Purchase new displays for SCC | 40d |  |  | start no earlier than 2018-03-01 | dixon | 320h |  |
| 520 | 7.2.5.4 | Add spare network switch to SCC | 40d |  |  | start no earlier than 2018-03-01 | dixon | 320h |  |
| 521 | 7.2.6 | **Maintenance & refurbishment** |  |  |  | start no earlier than 2016-09-01 |  |  |  |
| 522 | 7.2.6.1 | **Test Pulse** |  |  |  |  |  |  |  |
| 523 | 7.2.6.1.1 | New RF PIN switch installation & tes | 1d |  |  | start no earlier than 2017-06-28 | emmett; loew [50%] | 12h |  |
| 524 | 7.2.6.2 | **Pedestal** |  |  |  | start no earlier than 2017-06-22 |  |  |  |
| 525 | 7.2.6.2.1 | AZ Brake chatter investigation | 3d |  |  | start no earlier than 2017-07-10 | lovell; Bobka [50%] | 36h |  |
| 526 | 7.2.6.2.2 | AZ oil pump heater float switch relay | 2d |  |  | start no earlier than 2017-07-06 | lovell | 16h |  |
| 527 | 7.2.6.2.3 | AZ oil pressure sensor into monitoring (?) |  |  |  | start no earlier than 2017-06-22 |  | 8h |  |
| 528 | 7.2.6.2.4 | Adjust AZ rotary joint alignment with DFS | 5d | 525 |  | start no earlier than 2017-07-10 | DFS; lovell; erickson; emmett [50%] | 88h |  |
| 529 | 7.2.6.2.5 | New Slip rings: terminate cable with MS connectors, test | 5d |  |  | start no earlier than 2017-07-20 | erickson | 40h |  |
| 530 | 7.2.6.2.6 | New Slip rings installation | 2d |  |  | start no earlier than 2017-08-07 | lovell [50%]; erickson [50%] | 16h |  |
| 531 | 7.2.6.2.7 | AZ Fiber Rotary Joint installation | 2d | 530SS |  |  | lovell [50%]; erickson [50%] | 16h |  |
| 532 | 7.2.6.2.8 | AZ motor sprocket replacement | 1d |  |  | start no earlier than 2017-06-26 | Bobka | 8h |  |
| 533 | 7.2.6.2.9 | AZ grease bullgear | 1d |  |  | start no earlier than 2017-07-19 | lovell; erickson | 16h |  |
| 534 | 7.2.6.3 | **Antenna & Installation** |  |  |  | start no earlier than 2017-06-22 |  |  |  |
| 535 | 7.2.6.3.1 | WG feed horn window replacement |  |  | 100% | start no earlier than 2017-06-22 |  | 8h | 8h |
| 536 | 7.2.6.3.2 | Order additional WG gaskets (?) |  |  |  | start no earlier than 2017-06-22 |  | 8h |  |
| 537 | 7.2.6.3.3 | WG pressure sensor debugging | 10d |  |  | start no earlier than 2017-09-04 | lovell; dixon | 160h |  |
| 538 | 7.2.6.3.4 | Arrange Manlift for Radar absorber installtion | 1d | 528, 533SS |  |  | lovell [50%] | 4h |  |
| 539 | 7.2.6.3.5 | Radar Absorber Installation (on dish) | 2d | 538 |  | start no earlier than 2017-07-24 | lovell; erickson | 32h |  |

Notes:
- 526: can wait. not high priority
- 528: should happen before radar absorber
- 530: scheduled delivery - end of July
- 531: Should happen with slipring installatoin
- 535: Check status upon Lovell’s return
- 536: Check status upon Erikson’s return
- 537: wait until Dixon is home

| ID | WBS | Task | Duration | Predecessors | Constraint | Resources | Work |
| --- | --- | --- | --- | --- | --- | --- | --- |
| 540 | 7.2.6.4 | **Airconditioner** |  |  | start no earlier than 2017-06-22 |  |  |
| 541 | 7.2.6.4.1 | Install new AC in generator container | 5d |  | start no earlier than 2017-07-06 | DFS; Bobka; erickson | 80h |
| 542 | 7.2.6.4.2 | AC in Transmitter container - service | 1d | 541 |  | Bobka [50%] | 4h |
| 543 | 7.2.6.4.3 | Install new AC in Transmitter container | 1d | 542 |  | Bobka; erickson | 16h |
| 544 | 7.2.6.4.4 | AC service - all | 1d | 543 |  | Bobka | 8h |
| 545 | 7.2.6.4.5 | AC repair - Tech container | 1d | 539 |  | lovell [50%]; erickson [50%] | 8h |
| 546 | 7.2.6.4.6 | Install new AC in Annex & Tech containers | 20d |  | start no earlier than 2018-04-02 | Bobka | 160h |
| 547 | 7.2.6.5 | **Transmitter** |  |  | start no earlier than 2017-06-22 |  |  |
| 548 | 7.2.6.5.1 | Order HV oil | 1d |  | start no earlier than 2017-06-22 | erickson [50%] | 4h |
| 549 | 7.2.6.5.2 | Replace HV oil | 1d | 548 | start no earlier than 2017-06-22 | erickson; lovell | 16h |
| 550 | 7.2.6.5.3 | Repair/replace Transmitter A10 chassis (damaged when received from the ROC) | 1d |  | start no earlier than 2017-06-22 | emmett; erickson | 16h |
| 551 | 7.2.6.5.4 | Upgrade transmitter to ROC specs | 80d |  | start no earlier than 2018-03-01 | loew; emmett | 1280h |
| 552 | 7.2.6.6 | **UPS maintenance** |  |  |  |  |  |
| 553 | 7.2.6.6.1 | Batteries Purchase & Delivery - FY18 task | 1d |  | start no earlier than 2018-02-05 | lovell [50%] | 4h |
| 554 | 7.2.6.6.2 | Batteries replacement - corroding | 7d | 553 |  | lovell; erickson | 112h |
| 555 | 7.2.6.6.3 | Vendor service - routine maintenance |  | 554 | start no earlier than 2018-05-01 |  | 8h |
| 556 | 7.2.6.7 | **Generator maintenance** | 15d |  |  |  |  |
| 557 | 7.2.6.7.1 | Perform maintenance on external generator | 80d |  | start no earlier than 2017-10-16 | Bobka | 640h |
| 558 | 7.2.6.7.2 | Install external generator at site | 20d | 557 |  | Bobka | 160h |
| 559 | 7.2.6.7.3 | Inspect fuel system & maintain as needed | 20d | 558SS |  | Bobka | 160h |
| 560 | 7.2.6.7.4 | Test both generators and fail-over | 20d | 559 |  | Bobka | 160h |
| 561 | 7.2.6.8 | **Documentation** |  |  |  |  |  |
| 562 | 7.2.6.8.1 | Schematic update completed - before tear down |  |  | start no earlier than 2018-04-02 | erickson | 160h |
| 563 | 7.2.6.8.2 | Operational Manual - before tear down |  |  | start no earlier than 2018-04-02 |  | 80h |

Notes:
- 540: This category should be completed in July/August for hot weather testing

| ID | WBS | Task | Duration | Predecessors | Constraint | Resources | Work |
| --- | --- | --- | --- | --- | --- | --- | --- |
| 564 | 7.2.6.9 | **Support** |  |  | start no earlier than 2017-06-22 |  |  |
| 565 | 7.2.6.9.1 | Wooden boxes / crates replacement | 10d |  | start no earlier than 2018-01-02 | erickson | 80h |
| 566 | 7.2.6.9.2 | Blue shipping box foam replacement | 5d |  | start no earlier than 2018-01-02 | erickson | 40h |
| 567 | 7.2.6.9.3 | Organize Marshall & warehouse in preparation for inventory | 20d |  | start no earlier than 2018-04-02 | emmett; lovell; erickson | 480h |
| 568 | 7.2.6.9.4 | Complete fuel container cradle assembly | 1d |  | start no earlier than 2017-06-22 | lovell; erickson | 16h |
| 569 | 7.2.6.9.5 | Annex maintenance - evaluation | 5d |  | start no earlier than 2017-09-01 | erickson | 40h |
| 570 | 7.2.6.9.6 | Manufacture weather station mounting brackets & Installation | 3d |  | start no earlier than 2017-09-01 | erickson | 24h |
| 571 | 7.2.6.9.7 | “RF ON” Strobe light troubleshooting | 1d |  | start no earlier than 2017-06-22 | lovell [50%]; erickson [50%] | 8h |
| 572 | 7.2.6.9.8 | Install Annex container | 40d |  | start no earlier than 2018-02-05 | Bobka | 320h |
| 573 | 7.2.6.9.9 | Identify Container 9 and prep for field deployment | 40d |  | start no earlier than 2018-02-05 | Bobka; lovell | 640h |
| 574 | 7.2.6.9.10 | Inspect all containers & perform maintenance as required | 80d |  | start no earlier than 2018-03-05 | erickson; lovell; emmett; Bobka | 2560h |
| 575 | 7.2.6.9.11 | Inspect all mechanical items and perform maintenance as required | 80d |  | start no earlier than 2018-03-05 | erickson; lovell; emmett; Bobka | 2560h |
| 576 | 7.2.6.9.12 | Inspect all electrical items and perform maintenance as required | 80d |  | start no earlier than 2018-03-05 | erickson; lovell; emmett; Bobka | 2560h |
| 577 | 7.2.6.9.13 | Review list of required spare parts | 20d |  | start no earlier than 2018-03-01 |  | 160h |
| 578 | 7.2.6.9.14 | Purchase required spare parts | 20d | 577 |  |  | 160h |
| 579 | 7.2.7 | **SPOLKa testing & Upgrate** |  |  |  |  |  |
| 580 | 7.2.7.1 | Test spare TR Tube | 1d |  | start no earlier than 2017-06-29 | loew; emmett | 16h |
| 581 | 7.2.7.2 | **Spol Temperature Sensing Scheme** |  |  |  |  |  |
| 582 | 7.2.7.2.1 | Design TX container Temp sensor (type T ?) | 10d |  | start no earlier than 2017-07-05 | loew | 80h |
| 583 | 7.2.7.2.2 | TX container Temp Sensor Implementation |  | 582 |  |  | 120h |
| 584 | 7.2.7.2.3 | Repair H LNA temperature sensor | 1d | 583 |  | erickson | 8h |
| 585 | 7.2.7.3 | Servo Amp purchase & installation — Mitch Switch controller ,B25A20ACP (?) |  |  | start no earlier than 2017-06-22 |  | 8h |
| 586 | 7.2.7.4 | Mitch Switch Refurbishment | 5d |  | start no earlier than 2017-12-04 | DFS; erickson | 40h |
| 587 | 7.2.7.5 | **Timing Trigger** |  |  | start no earlier than 2017-06-22 |  |  |
| 588 | 7.2.7.5.1 | Cabling associated with new trigger system |  |  | start no earlier than 2017-09-01 |  | 8h |
| 589 | 7.2.7.5.2 | Install new radar trigger system |  | 588 |  |  | 8h |
| 590 | 7.2.7.5.3 | Manufacture new Spol Trigger chassis rear panel |  | 589 | start no earlier than 2017-06-22 |  | 8h |
| 591 | 7.2.7.5.4 | RF bracketing tuning — Tune TX trigger |  | 590 | start no earlier than 2017-06-22 |  | 8h |
| 592 | 7.2.7.5.5 | Test new trigger timing for TX & RX |  | 591 | start no earlier than 2017-06-22 |  | 8h |

| ID | WBS | Task | Type | Duration | Predecessors | Complete | Constraint | Resources | Work | Actual work |
| --- | --- | --- | --- | --- | --- | --- | --- | --- | --- | --- |
| 593 | 7.2.7.6 | **Drivetrain Monitoring (?)** |  |  |  |  | start no earlier than 2017-06-22 |  |  |  |
| 594 | 7.2.7.6.1 | Design monitoring system |  |  |  |  | start no earlier than 2017-06-22 | loew | 8h |  |
| 595 | 7.2.7.6.2 | fabricate cables |  |  | 594 |  | start no earlier than 2017-06-22 |  | 8h |  |
| 596 | 7.2.7.7 | **Ka-band Integration** |  |  |  |  |  |  |  |  |
| 597 | 7.2.7.7.1 | Prepare system for Ka install |  |  |  |  | start no earlier than 2017-09-25 |  | 40h |  |
| 598 | 7.2.7.7.2 | Ka-band Installation Date | milestone |  | 597 |  | start no earlier than 2017-10-02 |  |  |  |
| 599 | 7.2.7.7.3 | Counter weight adjustments (?) |  |  | 598SS |  |  |  | 40h |  |
| 600 | 7.2.8 | Calibrate Test Equipment |  | 80d |  |  | start no earlier than 2017-11-01 | emmett | 640h |  |
| 601 | 8 | **Ka-BAND** |  |  |  |  |  |  |  |  |
| 602 | 8.1 | **Proposed field projects** |  |  |  |  | start no earlier than 2016-09-30 |  |  |  |
| 603 | 8.1.1 | RELAMPAGO |  |  |  |  | start no earlier than 2017-06-22 |  | 8h |  |
| 604 | 8.2 | **Development** |  |  |  |  | start no earlier than 2016-09-30 |  |  |  |
| 605 | 8.2.1 | NSF Ka-band decision deadline | milestone |  |  |  |  |  |  |  |
| 606 | 8.2.2 | **Ka-band resurrection** |  | 99d |  |  | start no earlier than 2017-03-01 |  |  |  |
| 607 | 8.2.2.1 | **Engineering** |  |  |  |  | start no earlier than 2017-03-01 |  |  |  |
| 608 | 8.2.2.1.1 | **Interconnection** |  |  |  |  | start no earlier than 2017-05-01 |  |  |  |
| 609 | 8.2.2.1.1.1 | Review & Update current interconnection diagrams/spreadsheets |  | 5d |  | 50% |  | hwang | 40h | 20h |
| 610 | 8.2.2.1.1.2 | Evaluate system interconnect from bench test |  | 10d |  | 75% |  | hwang | 80h | 60h |
| 611 | 8.2.2.1.1.3 | Verify current cable condition |  | 3d |  |  | start no earlier than 2017-06-26 | emmett | 24h |  |
| 612 | 8.2.2.1.1.4 | Rebuild cable |  | 26d | 611 |  | start no earlier than 2017-07-04 | emmett [80%] | 134.4h |  |
| 613 | 8.2.2.1.2 | **Transmitter** |  |  |  |  |  |  |  |  |
| 614 | 8.2.2.1.2.1 | RS232 communication board & schematic |  | 3d |  | 100% | start no earlier than 2017-05-01 | hwang | 24h | 24h |
| 615 | 8.2.2.1.2.2 | RS232 reset connection |  | 3d | 614 | 75% | start no earlier than 2017-05-01 | hwang | 24h | 18h |
| 616 | 8.2.2.1.2.3 | HV power supply board & schematics |  | 3d | 615 |  |  | hwang | 24h |  |

| ID | WBS | Task | Duration | Predecessors | Complete | Constraint | Resources | Work | Actual work |
| --- | --- | --- | --- | --- | --- | --- | --- | --- | --- |
| 617 | 8.2.2.1.3 | **Spares** |  |  |  |  |  |  |  |
| 618 | 8.2.2.1.3.1 | Current Oscillator functionality and documentation |  |  | 100% | start no earlier than 2017-05-01 |  | 40h | 40h |
| 619 | 8.2.2.1.3.2 | Spare Oscillator Test | 5d | 618 | 75% |  | hwang | 40h | 30h |
| 620 | 8.2.2.1.3.3 | Test key spares | 5d | 619 |  |  | hwang | 40h |  |
| 621 | 8.2.2.1.3.4 | Update existing spare part excel sheet | 3d | 620 |  |  | hwang | 24h |  |
| 622 | 8.2.2.1.4 | **Temperature Cntl & Test Pulse Detector** |  |  |  | start no earlier than 2017-05-01 |  |  |  |
| 623 | 8.2.2.1.4.1 | Characterization of Quinstar Detector |  |  | 100% |  |  | 40h | 40h |
| 624 | 8.2.2.1.4.2 | Transmitter Heat Test |  |  | 75% |  |  | 160h | 120h |
| 625 | 8.2.2.1.5 | **Pressurization** |  |  |  |  |  |  |  |
| 626 | 8.2.2.1.5.1 | Examine pressure leak TXR enclosure | 1d |  | 100% | start no earlier than 2017-05-24 | emmett | 8h | 8h |
| 627 | 8.2.2.1.5.2 | Install Pressure sensor |  | 626 |  |  |  | 8h |  |
| 628 | 8.2.2.1.6 | **Receiver Optimization** |  |  |  | start no earlier than 2017-06-19 |  |  |  |
| 629 | 8.2.2.1.6.1 | G0 channel power degradation | 10d |  |  |  | hwang [50%] | 40h |  |
| 630 | 8.2.2.1.6.2 | Receiver noise fluctuation | 15d | 629SS |  |  | hwang [50%] | 60h |  |
| 631 | 8.2.2.1.6.3 | Receiver stability test (long-term, with kadrx) | 17d | 630 |  |  | hwang; tsai [10%]; emmett [20%] | 164.8h |  |
| 632 | 8.2.2.1.6.4 | Whole system integration (include tall guide) | 3d | 631 |  |  | emmett; lovell [50%]; hwang [50%] | 48h |  |
| 633 | 8.2.2.1.6.5 | Receiver Calibration | 15d | 632 |  |  | hwang; tsai [20%]; emmett [20%] | 168h |  |
| 634 | 8.2.2.1.7 | **Feed Arcing** |  |  |  | finish no later than 2017-09-15 |  |  |  |
| 635 | 8.2.2.1.7.1 | Set-up System at high bay | 4d | 633 |  |  | hwang; emmett; lovell [50%] | 48h |  |
| 636 | 8.2.2.1.7.2 | Arcing investigation | 10d | 635 |  |  | hwang; emmett [30%]; tsai [30%] | 125.6h |  |
| 637 | 8.2.2.1.8 | Documentation |  |  |  | start no earlier than 2017-06-22 |  | 8h |  |
| 638 | 8.2.2.2 | **SE Task** |  |  |  |  |  |  |  |
| 639 | 8.2.2.2.1 | **Kadrx upgrade** |  |  |  |  |  |  |  |
| 640 | 8.2.2.2.1.1 | Install Pentek, Acromag and Digi drivers and software | 5d |  |  | start no earlier than 2017-06-22 | burghart | 40h |  |
| 641 | 8.2.2.2.1.2 | Integrate new kadrx to system | 5d | 640, 630FF |  |  | burghart [50%] | 20h |  |
| 642 | 8.2.2.2.1.3 | Temperature correction |  |  |  | start no earlier than 2017-06-22 |  | 8h |  |

Notes:
- 627: Tested shreshold 32.5 psig. Operate at 35 psig.

| ID | WBS | Task | Duration | Predecessors | Constraint | Resources | Work |
| --- | --- | --- | --- | --- | --- | --- | --- |
| 643 | 9 | **APAR** |  |  | start no earlier than 2016-10-13 |  |  |
| 644 | 9.1 | FY16 ABR tasks |  |  | start no earlier than 2016-09-30 |  | 8h |
| 645 | 9.2 | FY17 ABR request |  |  | start no earlier than 2016-09-30 |  | 8h |
| 646 | 9.3 | **NOAA BAA** |  |  | start no earlier than 2017-10-10 |  |  |
| 647 | 9.3.1 | 8X8 Overall System Design | 0d |  | start no earlier than 2017-10-16 | loew; tsai; hwang; dixon |  |
| 648 | 9.3.2 | **8x8 Build out** |  |  | start no earlier than 2017-10-05 |  |  |
| 649 | 9.3.2.1 | PCB fabrication | 50d |  | start no earlier than 2017-10-11 | loew | 400h |
| 650 | 9.3.2.2 | Inventory existing parts/components | 3d |  | start no earlier than 2017-11-13 | loew | 24h |
| 651 | 9.3.2.3 | Purchase components for LRU | 20d | 650 |  | loew | 160h |
| 652 | 9.3.2.4 | Modify heatsink design & connector reenforcement | 3d |  |  | DFS; emmett | 24h |
| 653 | 9.3.2.5 | Fabricate heatsink | 40d | 652 |  | emmett; DFS | 320h |
| 654 | 9.3.2.6 | Fully populate with components |  | 651, 649 | start no earlier than 2018-01-08 |  | 320h |
| 655 | 9.3.2.7 | **I/O cards for Pentek communication with AC** | 35d |  |  |  |  |
| 656 | 9.3.2.7.1 | Design | 30d |  | start no earlier than 2018-01-08 | loew | 240h |
| 657 | 9.3.2.7.2 | Fabricate | 10d | 656 |  | loew; emmett; burghart; dixon | 320h |
| 658 | 9.3.2.7.3 | Integrate & Test | 10d | 657 |  | loew; emmett; burghart; dixon | 320h |
| 659 | 9.3.2.8 | **Design PCB backplane communication** | 30d |  | start no earlier than 2018-03-19 |  |  |
| 660 | 9.3.2.8.1 | Design | 10d |  |  | loew | 80h |
| 661 | 9.3.2.8.2 | Fabricate PCBs | 10d | 660 |  |  | 80h |
| 662 | 9.3.2.8.3 | Test & verify PCB | 10d | 661 |  | loew; emmett | 160h |
| 663 | 9.3.2.9 | Design PCB backplane power distribution | 30d |  |  |  |  |
| 664 | 9.3.2.10 | **Assemble 8x8 in lab and initial testing** |  |  |  |  |  |
| 665 | 9.3.2.10.1 | Assemble PCB with heatsinks | 10d | 654 |  | emmett | 80h |
| 666 | 9.3.2.10.2 | Establish communications and connections | 10d | 665 |  | loew; emmett | 160h |
| 667 | 9.3.2.10.3 | T/R module level tests on VNA | 30d | 666 |  | tsai; emmett | 480h |
| 668 | 9.3.2.10.4 | Transmit functionality Test | 30d | 667SS |  | tsai; emmett [10%]; hwang | 504h |
| 669 | 9.3.2.11 | Characterize and calibrate LRU in compact scanner | 20d | 667 |  | emmett; tsai | 320h |
| 670 | 9.3.2.12 | Manufacture mechanical structure for OU characterization | 40d | 669FF |  | emmett; DFS | 320h |

Notes:
- 649: to establish contract and fabrication. May need to order Rohasell material
- 652: Update design with current mods
- 654: Contractor task
- 655: Eric design to connect Pentek to AC
- 656: Don’t have the architect currently 10/12/17
- 663: Maybe a bus bar instead of a PCB board. Terminal board & cables
- 664: PCB level test
- 670: radome? Identify funds!

| ID | WBS | Task | Duration | Predecessors | Complete | Constraint | Resources | Work | Actual work |
| --- | --- | --- | --- | --- | --- | --- | --- | --- | --- |
| 671 | 9.3.3 | **Hardware purchases** |  |  |  | start no earlier than 2017-10-05 |  |  |  |
| 672 | 9.3.3.1 | Purchase Pentek development tool | 5d |  |  |  | loew | 40h |  |
| 673 | 9.3.3.2 | Order Pentek hardware | 15d | 672SS |  |  | loew | 120h |  |
| 674 | 9.3.3.3 | Pentek hardware delivery |  | 673FS+90d |  |  |  | 8h |  |
| 675 | 9.3.3.4 | Digital receiver computer (Trenton) | 30d |  | 100% |  | dixon | 240h | 240h |
| 676 | 9.3.3.5 | Install Pentek in digital receiver and test | 20d | 674 |  |  | dixon; burghart | 320h |  |
| 677 | 9.3.3.6 | Purchase upgrade to AC hardware if needed | 10d |  |  | start no earlier than 2018-12-03 | loew | 80h |  |
| 678 | 9.3.3.7 | Purchase Archiver computer hardware. Installation and test | 30d |  |  | start no earlier than 2018-04-02 | burghart; dixon | 480h |  |
| 679 | 9.3.3.8 | Purchase LRU Power Supply |  | 669FF |  |  |  | 8h |  |
| 680 | 9.3.4 | **RF Tranceiver** |  |  |  |  |  |  |  |
| 681 | 9.3.4.1 | Design RF tranceiver | 50d |  |  | start no earlier than 2018-02-14 | tsai; hwang; loew | 1200h |  |
| 682 | 9.3.4.2 | Purchase parts for tranceiver | 15d | 681 |  |  | tsai; hwang | 240h |  |
| 683 | 9.3.4.3 | Design wiring for transceiver | 15d | 681 |  |  | tsai | 120h |  |
| 684 | 9.3.4.4 | **Assemble Tranceiver** |  |  |  |  |  |  |  |
| 685 | 9.3.4.4.1 | Wiring & mechanical | 20d | 683 |  |  | lovell; emmett | 320h |  |
| 686 | 9.3.4.4.2 | Testing and verify | 15d | 685 |  |  | tsai; hwang | 240h |  |
| 687 | 9.3.4.5 | Integrate RF transceiver into lab system | 30d | 686 |  |  | emmett; tsai | 480h |  |
| 688 | 9.3.5 | **Hiring / Training** |  |  |  | start no earlier than 2017-10-05 |  |  |  |
| 689 | 9.3.5.1 | Hire FPGA EE/SE | 120d |  |  |  | tsai; dixon; loew | 2880h |  |
| 690 | 9.3.5.2 | Train FPGA EE/SE on Pentek Firmware | 60d | 689 |  |  | loew | 480h |  |
| 691 | 9.3.5.3 | Train FPGA EE/SE on AC firmware | 60d | 690SS |  |  |  | 480h |  |
| 692 | 9.3.5.4 | Contract consultant services for LabVIEW upgrade | 20d |  |  | start no earlier than 2017-11-13 | tsai [25%] | 40h |  |
| 693 | 9.3.6 | **Pentek FPGA/pulse compression** |  |  |  |  |  |  |  |
| 694 | 9.3.6.1 | Develop FPGA code for new model Pentek (Cobalt) | 100d | 691SS |  |  | loew; RSF EE new hire | 1600h |  |
| 695 | 9.3.6.2 | Design waveforms for pulse compression | 40d |  |  | start no earlier than 2018-04-02 | loew | 320h |  |
| 696 | 9.3.6.3 | FPGA code for new model Pentek - upconversion | 50d | 694SS+80d, 695 |  |  | loew; RSF EE new hire | 800h |  |
| 697 | 9.3.6.4 | Develop firmware code for receiving and processing returns from pulse compression | 40d | 696 |  |  | loew; RSF EE new hire | 640h |  |
| 698 | 9.3.6.5 | Develop client side code for new Pentek | 60d | 694SS+40d |  |  | burghart; dixon | 960h |  |
| 699 | 9.3.6.6 | Develop FPGA code for T/R modules | 120d | 694SS+40d |  |  | RSF EE new hire | 960h |  |
| 700 | 9.3.6.7 | Develop code for archiver server to handle pulse compression data stream | 40d | 698 |  |  | dixon; burghart | 640h |  |
| 701 | 9.3.6.8 | Test pulse compression | 25d | 700, 697 |  |  | dixon; burghart; loew; tsai; emmett; lovell; RSF EE new hire | 1400h |  |

Notes:
- 678: typical lead time for computer :4w, rack mount computers
- 679: 28V for 8 PCB cards
- 681: Preliminary microwave PCB design & discrete components
- 687: Integrate with LRU assembly & digital receiver
- 691: Charlie Martin Task
- 694: Downconversion
- 699: Eric needs to revisit this topic May defer

| ID | WBS | Task | Duration | Predecessors | Constraint | Resources | Work |
| --- | --- | --- | --- | --- | --- | --- | --- |
| 702 | 9.3.7 | **Moments computations / Display** |  |  |  |  |  |
| 703 | 9.3.7.1 | Modify moments computations on Archiver suitable for LRU pulsing scheme | 20d |  | start no earlier than 2018-07-02 | dixon | 160h |
| 704 | 9.3.7.2 | upgrade displays on Archiver suitable for LRU testing | 40d |  | start no earlier than 2018-07-02 | burghart; dixon | 640h |
| 705 | 9.3.8 | **Scan Control GUI** |  |  |  |  |  |
| 706 | 9.3.8.1 | Develop C++ scan control GUI on Archiver to communicate with Scan Controller firmware | 40d |  | start no earlier than 2018-07-02 | burghart; tsai; loew | 960h |
| 707 | 9.3.8.2 | Upgrade FPGA code for Scan Controller to communicate with GUI | 20d | 699SS, 706 |  | RSF EE new hire | 160h |
| 708 | 9.3.9 | **Final Testing & Characterization** |  |  | finish no later than 2019-03-01 |  |  |
| 709 | 9.3.9.1 | Design/manufacture test structure & radome for final testing | 40d |  | start no earlier than 2018-04-30 | DFS; emmett | 320h |
| 710 | 9.3.9.2 | OU Chamber Characterization | 40d | 669, 709 |  | emmett; tsai | 640h |
| 711 | 9.3.9.3 | Test receiver functionality using test equipment in lab | 20d | 701 |  | loew; dixon; burghart; tsai; emmett; RSF EE new hire | 960h |
| 712 | 9.3.9.4 | Transmit waveform loop-through test including LRU assembly | 20d | 711SS, 710 |  | loew; tsai; emmett; dixon; burghart; RSF EE new hire | 960h |
| 713 | 9.3.9.5 | Measure antenna pattern using external target | 20d | 712 |  | loew; emmett | 320h |
| 714 | 9.3.9.6 | Transmit vertically to verify end-to-end performance | 20d | 713SS |  | emmett; tsai; loew | 480h |
| 715 | 9.3.10 | **Reporting** |  |  |  |  |  |
| 716 | 9.3.10.1 | Report preparation |  |  | start no earlier than 2019-02-28 |  | 160h |

Notes:
- 706: To replace LabVIEW GUI role
- 709: can be based on the OU structure
- 711: entire system, from sum port through transceiver to DRX, excluding LRU, including loop-through test of TX waveforms
